# camod_2.1_schedule

Schedule from MS Project, 2005-12-29 to 2006-03-22.
nci

## Calendars

- Standard: Mon-Fri 08:00-12:00, 13:00-17:00; Sat-Sun off.

## Resources

| Resource |
| --- |
| CCMG |
| NCICB |
| Srini |
| CCMG Members |
| QA |
| Ulli |
| Nick |
| Team |
| David |
| Marc P. |
| Sima |
| Jill |
| Ajay |
| Derek |
| Davidi |

## Schedule

| ID | WBS | Task | Duration | Start | Finish | Predecessors | Total slack | Free slack | Constraint | Resources | Work |
| --- | --- | --- | --- | --- | --- | --- | --- | --- | --- | --- | --- |
| 1 | 1 | **caImage EVS Upgrade** | 59.5d | 2005-12-29 | 2006-03-22 |  | 0d |  |  |  | 957.4h |
| 2 | 1.1 | **Inception** | 2.4d | 2005-12-29 | 2006-01-02 |  | 0d |  |  |  | 24h |
| 3 | 1.1.1 | Identify caImage requirements | 2.4d | 2005-12-29 | 2006-01-02 |  | 0d |  | start no earlier than 2005-12-29 | Srini [50%]; Ulli [50%]; David [50%] | 24h |
| 4 | 1.2 | **Elaboration** | 16d | 2006-01-02 | 2006-01-24 | 2 | 0d |  |  |  | 288h |
| 5 | 1.2.1 | Draft Test Cases | 1w | 2006-01-02 | 2006-01-09 |  | 25.7d |  |  | Ulli [50%]; David [50%]; Ajay [50%] | 60h |
| 6 | 1.2.2 | Draft Use Cases | 3w | 2006-01-02 | 2006-01-23 | 2 | 0d |  |  | David [50%]; Ajay [50%]; Ulli [50%] | 180h |
| 7 | 1.2.3 | Review Use Cases | 1d | 2006-01-23 | 2006-01-24 | 6 | 41.1d |  |  | Team | 8h |
| 8 | 1.2.4 | **caImage database changes** | 5d | 2006-01-02 | 2006-01-09 |  | 25.6d |  |  |  | 40h |
| 9 | 1.2.4.1 | Document CTRM -> EVS mappings | 1w | 2006-01-02 | 2006-01-09 |  | 24.7d | 0d | start no earlier than 2005-06-06 | Ulli [75%]; Ajay [25%] | 40h |
| 10 | 1.3 | **Construction** | 39.1d | 2006-01-23 | 2006-03-17 | 6 | 0d |  |  |  | 571.4h |
| 11 | 1.3.1 | Requirements Analysis | 2d | 2006-01-23 | 2006-01-25 |  | 0d |  |  | David [25%]; Ajay [75%] | 9h |
| 12 | 1.3.2 | Design | 12d | 2006-01-25 | 2006-02-10 | 11 | 0d |  |  | David [25%]; Ajay [75%] | 33.6h |
| 13 | 1.3.3 | Create concept code migration script | 1d | 2006-01-23 | 2006-01-24 | 9 | 41.1d |  |  | Derek [75%]; Ulli [25%] | 8h |
| 14 | 1.3.4 | **Code** | 18.6d | 2006-02-10 | 2006-03-08 |  | 0d |  |  |  | 148.8h |
| 15 | 1.3.4.1 | **EVS Tree modification** | 15.6d | 2006-02-10 | 2006-03-03 |  | 0d |  |  |  | 124.8h |
| 16 | 1.3.4.1.1 | #37 - EVS Tree - Why does a search for synonyms in anatomy tree return disease and drugs? | 2d | 2006-02-10 | 2006-02-14 | 12 | 0d |  |  | Ajay | 16h |
| 17 | 1.3.4.1.2 | #274 - EVS Tree - restore the association between organ and diagnosis | 3d | 2006-02-14 | 2006-02-17 | 16 | 0d |  |  | Ajay | 24h |
| 18 | 1.3.4.1.3 | #276 - EVS Tree - use display name instead of concept name | 0.5d | 2006-02-17 | 2006-02-17 | 17 | 0d |  |  | Ajay | 4h |
| 19 | 1.3.4.1.4 | #279 - EVS Tree - remove the word Done from the tree | 0.1d | 2006-02-17 | 2006-02-17 | 18 | 0d |  |  | Ajay | 0.8h |
| 20 | 1.3.4.1.5 | #371 - EVS Tree - make display of EVS tree generic | 2w | 2006-02-20 | 2006-03-03 | 19 | 0d |  |  | Ajay | 80h |
| 21 | 1.3.4.2 | Change caImage to use new EVSTree | 3d | 2006-03-06 | 2006-03-08 | 20 | 0d |  |  | Ajay | 24h |
| 22 | 1.3.5 | Tag build and deploy to QA server | 1d | 2006-03-09 | 2006-03-09 | 21 | 0d |  |  | QA; David [50%] | 12h |
| 23 | 1.3.6 | Test | 3d | 2006-03-10 | 2006-03-14 | 22 | 5.5d |  |  | QA; Ulli [50%] | 36h |
| 24 | 1.3.7 | **Integration Testing Schedule** | 5.5d | 2006-03-10 | 2006-03-17 | 22 | 0d |  |  | QA | 324h |
| 25 | 1.3.7.1 | **Develop Test Plan** | 3d | 2006-03-10 | 2006-03-14 |  | 5.5d |  |  | QA | 60h |
| 26 | 1.3.7.1.1 | Develop Integration Test Plan | 3d | 2006-03-10 | 2006-03-14 |  | 5.5d |  |  | QA; David [50%] | 36h |
| 27 | 1.3.7.2 | Deploy to Development Server | 1d | 2006-03-10 | 2006-03-10 |  | 7.5d |  |  | QA | 8h |
| 28 | 1.3.7.3 | Development Test | 3d | 2006-03-10 | 2006-03-14 |  | 5.5d |  |  | QA; Ulli; Nick; Sima; David | 120h |
| 29 | 1.3.7.4 | Deploy to Integration Test Server | 1.5d | 2006-03-10 | 2006-03-13 |  | 0d |  |  | QA | 12h |
| 30 | 1.3.7.5 | Integration Test | 3d | 2006-03-10 | 2006-03-14 |  | 5.5d |  |  | QA; Ulli | 48h |
| 31 | 1.3.7.6 | Deploy to Staging Server | 1d | 2006-03-13 | 2006-03-14 | 29 | 0d |  |  | QA | 8h |
| 32 | 1.3.7.7 | Test | 3d | 2006-03-14 | 2006-03-17 | 31 | 0d |  |  | Ulli | 24h |

| ID | WBS | Task | Type | Duration | Start | Finish | Predecessors | Total slack | Constraint | Resources | Work |
| --- | --- | --- | --- | --- | --- | --- | --- | --- | --- | --- | --- |
| 33 | 1.4 | **Transition** |  | 59.5d | 2005-12-29 | 2006-03-22 |  | 0d |  |  | 74h |
| 34 | 1.4.1 | Code Freeze |  | 1d | 2006-03-10 | 2006-03-10 | 22 | 7.5d |  | David | 8h |
| 35 | 1.4.2 | Deploy to Production |  | 3d | 2006-03-17 | 2006-03-22 | 32 | 0d | start no earlier than 2006-02-10 | QA | 24h |
| 36 | 1.4.3 | **Document Iteration** |  | 1d | 2005-12-29 | 2005-12-29 |  | 33d |  |  | 42h |
| 37 | 1.4.3.1 | Update User Guides |  | 1d | 2005-12-29 | 2005-12-29 |  | 32.1d |  | Ulli [50%]; Jill [50%] | 8h |
| 38 | 1.4.3.2 | Update technical / design documentation |  | 1d | 2005-12-29 | 2005-12-29 |  | 32.1d |  | Ulli [50%]; Srini [50%]; Jill [50%]; David [50%] | 16h |
| 39 | 1.4.3.3 | Regenerate JavaDocs |  | 0.25d | 2005-12-29 | 2005-12-29 |  | 32.85d |  | David | 2h |
| 40 | 1.4.3.4 | Create Release Notes |  | 0.5d | 2005-12-29 | 2005-12-29 |  | 32.6d |  | Ulli | 4h |
| 41 | 1.4.3.5 | Create Known Issues document |  | 0.5d | 2005-12-29 | 2005-12-29 |  | 32.6d |  | Ulli | 4h |
| 42 | 1.4.3.6 | Create Fixed defects document |  | 0.5d | 2005-12-29 | 2005-12-29 |  | 32.6d |  | Ulli | 4h |
| 43 | 1.4.3.7 | Create What's New Document |  | 0.5d | 2005-12-29 | 2005-12-29 |  | 32.6d |  | Ulli | 4h |
| 44 | 1.5 | Milestone: Complete caImage EVSTree upgrade | milestone | 0d | 2006-03-22 | 2006-03-22 | 35 | 0d |  | Ulli |  |
