# caMOD FY005 03042005

Schedule from MS Project, 2004-09-30 to 2006-01-17, A marks actual dates.
NCI/NIH

## Calendars

- Standard: Mon-Fri 08:00-12:00, 13:00-17:00; Sat-Sun off.

## Resources

| Resource |
| --- |
| Clint |
| Ryan |
| Christian - Graphics |
| CCMG |
| Sharon |
| Johnita |
| Marguerite |
| NCICB |
| JP |
| James |
| QA |
| Team |
| Ulli |
| Fei |
| - |
| caDSR |
| caDSR Team |
| caBIO |
| TBD SR |
| Alex |
| Richard |
| TBD |
| J |
| DataArchitect |
| Mark P. |
| Marc P. |
| CCMG Members |
| Sashi |
| FL |
| Sumeet Rajput |
| Nick |
| Srini |

## Schedule

| ID | WBS | Task | Duration | Start | Finish | Predecessors | Complete | Remaining | Total slack | Free slack | Constraint | Resources | Work | Actual work |
| --- | --- | --- | --- | --- | --- | --- | --- | --- | --- | --- | --- | --- | --- | --- |
| 1 | 1 | **MMHCC FY005** | 339d | 2004-09-30 A | 2006-01-17 |  | 35% | 218.9d | 0d |  |  |  | 11014h | 2765.39h |
| 2 | 1.1 | caMOD Maintenance | 10w | 2004-09-30 A | 2004-12-08 A |  | 100% |  |  |  |  | JP; Johnita | 800h | 800h |
| 3 | 1.2 | **Inception** | 23d | 2004-12-09 A | 2005-01-10 | 2 | 99% | 0.19d | 266d |  |  |  | 364h | 362h |
| 4 | 1.2.1 | Identify Project Requirements | 1.5w | 2004-12-09 A | 2004-12-20 A |  | 100% |  |  |  |  | CCMG | 60h | 60h |
| 5 | 1.2.2 | Determine Level of Effort/Requirement | 2w | 2004-12-09 A | 2004-12-22 A |  | 100% |  |  |  |  | Sharon; Johnita | 160h | 160h |
| 6 | 1.2.3 | Prioritize Project Requirements | 3d | 2004-12-23 A | 2004-12-27 A | 5 | 100% |  |  |  |  | CCMG | 24h | 24h |
| 7 | 1.2.4 | Determine Project Scope | 1w | 2004-12-28 A | 2005-01-03 A | 6 | 100% |  |  |  |  | Sharon; Marguerite | 80h | 80h |
| 8 | 1.2.5 | Update Project Plan | 1w | 2005-01-04 A | 2005-01-10 | 7 | 95% | 0.05w | 266d |  |  | Sharon | 40h | 38h |
| 9 | 1.3 | **caMOD Defect Fixes** | 83d | 2005-01-05 A | 2005-04-29 |  | 93% | 5.68d | 4.15d | 0d |  |  | 462h | 422h |
| 10 | 1.3.1 | Yeast Data | 6.8w | 2005-01-05 A | 2005-02-21 A |  | 100% |  |  |  | finish no earlier than 2005-02-21 | Johnita [50%]; Alex [50%] | 268h | 268h |
| 11 | 1.3.2 | Xenograft/Alograft Data | 6.8w | 2005-01-05 A | 2005-02-21 A |  | 100% |  |  |  | finish no earlier than 2005-02-21 | Johnita [50%]; Alex [50%] | 154h | 154h |
| 12 | 1.3.3 | Test / Deploy yeast & xenograft fixes | 5d | 2005-04-25 | 2005-04-29 |  |  |  | 4.15d |  | start no earlier than 2005-04-25 | Johnita [50%]; Srini [25%]; Ulli [25%] | 40h |  |
| 13 | 1.4 | **CCB Meetings** | 236d | 2005-02-22 A | 2006-01-17 |  | 8% | 216.33d | 0d |  |  |  |  |  |
| 14 | 1.4.1 | February Meeting | 1d | 2005-02-22 A | 2005-02-22 A |  | 100% |  |  |  | start no earlier than 2005-02-22 |  |  |  |
| 15 | 1.4.2 | March Meeting | 1d | 2005-03-15 | 2005-03-15 |  |  |  | 220d |  | start no earlier than 2005-03-15 |  |  |  |
| 16 | 1.4.3 | April Meeting | 1d | 2005-04-19 | 2005-04-19 |  |  |  | 195d |  | start no earlier than 2005-04-19 |  |  |  |
| 17 | 1.4.4 | May Meeting | 1d | 2005-05-10 | 2005-05-10 |  |  |  | 180d |  | start no earlier than 2005-05-10 |  |  |  |
| 18 | 1.4.5 | June Meeting | 1d | 2005-06-21 | 2005-06-21 |  |  |  | 150d |  | start no earlier than 2005-06-21 |  |  |  |
| 19 | 1.4.6 | July Meeting | 1d | 2005-07-19 | 2005-07-19 |  |  |  | 130d |  | start no earlier than 2005-07-19 |  |  |  |
| 20 | 1.4.7 | August Meeting | 1d | 2005-08-16 | 2005-08-16 |  |  |  | 110d |  | start no earlier than 2005-08-16 |  |  |  |
| 21 | 1.4.8 | September Meeting | 1d | 2005-09-20 | 2005-09-20 |  |  |  | 85d |  | start no earlier than 2005-09-20 |  |  |  |
| 22 | 1.4.9 | October Meeting | 1d | 2005-10-18 | 2005-10-18 |  |  |  | 65d |  | start no earlier than 2005-10-18 |  |  |  |
| 23 | 1.4.10 | November Meeting | 1d | 2005-11-15 | 2005-11-15 |  |  |  | 45d |  | start no earlier than 2005-11-15 |  |  |  |
| 24 | 1.4.11 | December Meeting | 1d | 2005-12-20 | 2005-12-20 |  |  |  | 20d |  | start no earlier than 2005-12-20 |  |  |  |
| 25 | 1.4.12 | January, 2006 Meeting | 1d | 2006-01-17 | 2006-01-17 |  |  |  | 0d |  | start no earlier than 2006-01-17 |  |  |  |

| ID | WBS | Task | Duration | Start | Finish | Predecessors | Complete | Remaining | Total slack | Free slack | Constraint | Resources | Work | Actual work |
| --- | --- | --- | --- | --- | --- | --- | --- | --- | --- | --- | --- | --- | --- | --- |
| 26 | 1.5 | **caMOD Enhancements (2-Tier)** | 115d | 2005-01-05 A | 2005-06-14 |  | 71% | 33.32d | 155d |  |  |  | 856h | 608h |
| 27 | 1.5.1 | #16 - Add Tumor Volume, Weight, Age in Histology | 7.8w | 2005-01-05 A | 2005-02-28 A |  | 100% |  |  |  | finish no earlier than 2005-02-28 | JP | 312h | 312h |
| 28 | 1.5.2 | #31 - Add fields For Chemical/Drug Treatment | 2.4w | 2005-01-26 A | 2005-02-28 A | 27 | 100% |  |  |  | finish no earlier than 2005-02-28 | JP | 96h | 96h |
| 29 | 1.5.3 | #37 - Add Multiple Transgene Field | 1.2w | 2005-02-16 | 2005-03-16 | 28FS-9d |  |  | 167.75d | 0d |  | Nick | 48h |  |
| 30 | 1.5.4 | #28 - Add Environmental Exposures as Carcinogenic Agents | 2w | 2005-03-16 | 2005-04-21 | 29 |  |  | 167.75d | 0d |  | Nick | 80h |  |
| 31 | 1.5.5 | #29 - Include Nutrition as Carcinogenic Agent | 2w | 2005-04-21 | 2005-05-27 | 30 |  |  | 167.75d |  |  | Nick | 80h |  |
| 32 | 1.5.6 | #24 - Add Table of Contents to Search | 5w | 2005-05-04 A | 2005-06-07 A | 31 | 100% |  |  |  |  | Nick | 200h | 200h |
| 33 | 1.5.7 | Deploy Iteration to Production | 5d | 2005-06-08 | 2005-06-14 | 32 |  |  | 63d | 0d |  | QA | 40h |  |
| 34 | 1.6 | **caMod Enhancements (for N-Tier)** | 77d | 2005-06-15 | 2005-09-29 | 32 |  |  | 63d |  |  |  | 473.71h |  |
| 35 | 1.6.1 | #72 - Query Phenotype Field (Iteration 3) | 4w | 2005-06-15 | 2005-07-12 | 33 |  |  | 63d | 0d |  | JP [30%]; Johnita [20%]; TBD SR [20%] | 105.71h |  |
| 36 | 1.6.2 | #73 - Make Histology Comments Searchable (Iteration 4) | 3w | 2005-07-08 | 2005-07-28 | 35FS-3d |  |  | 63d | 0d |  | JP [30%]; Johnita [20%]; TBD SR [20%] | 84h |  |
| 37 | 1.6.3 | #74 - Make Comments Searchable on All Fields | 5w | 2005-07-29 | 2005-09-01 | 36 |  |  | 63d | 0d |  | JP [30%]; Johnita [20%]; TBD SR [20%] | 140h |  |
| 38 | 1.6.4 | #42 - 1 to Many Relationship Jax Availability | 4w | 2005-09-02 | 2005-09-29 | 37 |  |  | 63d | 0d |  | JP [30%]; Johnita [30%]; TBD SR [30%] | 144h |  |
| 39 | 1.7 | **caMOD Version 2 caBIG Silver Compliance (N-Tier)** | 208.5d | 2005-01-26 A | 2005-11-14 | 9 | 12% | 182.85d | 46.5d |  |  |  | 8058.27h | 573.39h |
| 40 | 1.7.1 | **Inception** | 5d | 2005-01-26 A | 2005-02-01 A |  | 100% |  |  |  |  |  | 80h | 80h |
| 41 | 1.7.1.1 | Identify caMOD caBIG Silver (N-Tier) Requirements | 1w | 2005-01-26 A | 2005-02-01 A |  | 100% |  |  |  |  | CCMG; NCICB | 80h | 80h |
| 42 | 1.7.2 | **Elaboration** | 197.5d | 2005-02-09 A | 2005-11-11 | 40 | 12% | 174.35d | 47.5d |  |  |  | 7638.27h | 493.39h |
| 43 | 1.7.2.1 | Draft caMOD caBIG Silver (N-Tier) Use Cases | 2w | 2005-02-09 A | 2005-05-02 |  | 95% | 0.1w | 46.5d | 0d |  | Johnita [50%]; JP; Ulli | 160h | 158h |
| 44 | 1.7.2.2 | Review Use Cases, including CCMG members | 1d | 2005-02-28 A | 2005-05-06 | 43FS+3d | 30% | 0.7d | 165.8d | 0d |  | CCMG Members | 8h | 2.4h |
| 45 | 1.7.2.3 | Draft caMOD caBIG Silver (N-Tier) Test Cases | 1w | 2005-05-06 | 2005-05-13 | 44 |  |  | 165.8d | 3.3d |  | QA; JP; Ulli | 120h |  |
| 46 | 1.7.2.4 | Determine caMOD Terminology Sources | 5w | 2005-02-22 A | 2005-05-04 |  | 90% | 0.5w | 184.5d |  |  | Ulli | 200h | 180h |
| 47 | 1.7.2.5 | Draft Architecture | 3w | 2005-02-23 A | 2005-05-11 | 43 | 50% | 1.5w | 51d | 0d |  | Johnita [50%] | 60h | 30h |
| 48 | 1.7.2.6 | Architecture Whiteboard Discussion | 1d | 2005-05-02 | 2005-05-02 | 47SS+4d |  |  | 181d | 0d |  |  |  |  |
| 49 | 1.7.2.7 | Draft User Interface Components | 3w | 2005-02-23 A | 2005-05-18 | 43 | 20% | 2.4w | 152.5d | 0d |  | Ulli; JP | 240h | 48h |
| 50 | 1.7.2.8 | Review Draft User Interface, including CCMG members | 5d | 2005-05-18 | 2005-05-25 | 49 |  |  | 169.5d |  |  | CCMG Members | 40h |  |

Notes:
- 27: 8 Hr Sr / 120 Hr Jr / Total: 128
- 28: 16 Sr. Hours / 120 Jr. Hours / Total: 136 Hours
- 29: 10 Sr. Hours / 80 Jr. Hours / Total: 90 Hours
- 30: 16 Sr. Hours / 120 Jr. Hours / Total: 136 Hours
- 31: 16 Sr Hours / 120 Jr Hours / 136 Total Hours
- 32: 80 Sr. Hours / 120 Jr Hours / Total: 200 Hours
- 35: 120 Sr / 120 Jr / 240 Total
- 36: 24 Sr / 120 Jr / 144 Total
- 37: 120 Sr / 120 Jr / 240 Total
- 38: 120 Sr / 120 Jr / 240 Total

| ID | WBS | Task | Duration | Start | Finish | Predecessors | Complete | Remaining | Total slack | Free slack | Resources | Work | Actual work |
| --- | --- | --- | --- | --- | --- | --- | --- | --- | --- | --- | --- | --- | --- |
| 51 | 1.7.2.9 | **Tool Kit Exetension** | 63d | 2005-02-22 A | 2005-05-19 |  | 7% | 58.42d | 173d |  | Marc P. [50%]; Johnita [20%]; Sashi [20%] | 453.6h | 32.99h |
| 52 | 1.7.2.9.1 | Determine use of automatic code generator | 8d | 2005-02-22 A | 2005-05-10 |  | 20% | 6.4d | 180.6d |  |  |  |  |
| 53 | 1.7.2.9.2 | Complete Tool Kit Extension | 14d | 2005-05-02 | 2005-05-19 |  |  |  | 173d |  |  |  |  |
| 54 | 1.7.2.10 | Draft Updated Object Model | 2w | 2005-03-23 A | 2005-06-01 | 47, 61FF | 25% | 1.5w | 164.5d |  | TBD SR [50%]; JP; Marc P. [50%] | 150h | 30h |
| 55 | 1.7.2.11 | Draft Updated Data Model | 2w | 2005-05-18 | 2005-06-01 | 47, 61FF |  |  | 164.5d |  | Alex [35%]; Marc P. [50%]; Sumeet Rajput [50%] | 108h |  |
| 56 | 1.7.2.12 | **Iteration 1: Architecture Prototype (Evolutionary Prototype)** | 83.5d | 2005-03-30 A | 2005-07-25 |  | 2% | 82.04d | 126.5d |  |  | 1352h | 12h |
| 57 | 1.7.2.12.1 | **Requirements Analysis** | 10d | 2005-05-02 | 2005-05-16 | 43 |  |  | 46.5d | 0d | Johnita [50%]; JP; Ulli | 200h |  |
| 58 | 1.7.2.12.1.1 | Requirements Outline | 7d | 2005-05-02 | 2005-05-11 |  |  |  | 46.5d | 0d |  |  |  |
| 59 | 1.7.2.12.1.2 | Use of Common Security Manager | 8d | 2005-05-02 | 2005-05-12 |  |  |  | 69.5d | 1d |  |  |  |
| 60 | 1.7.2.12.1.3 | Complete Requirements Analysis | 3d | 2005-05-11 | 2005-05-16 | 58, 59FF+1d |  |  | 68.5d |  |  |  |  |
| 61 | 1.7.2.12.2 | Design | 3w | 2005-05-11 | 2005-06-01 | 47FS-5d, 58 |  |  | 46.5d | 0d | Johnita [50%]; JP; TBD SR [50%]; Marc P. [50%] | 300h |  |
| 62 | 1.7.2.12.3 | Review Wireframes, including CCMG members | 5d | 2005-03-30 A | 2005-06-06 | 61, 49 | 30% | 3.5d | 161d |  | CCMG Members | 40h | 12h |
| 63 | 1.7.2.12.4 | Test Application using EVS Browser | 1w | 2005-05-03 | 2005-05-09 | 48 |  |  | 181d |  | Johnita [50%]; JP; TBD SR [50%]; Marc P. [50%] | 100h |  |
| 64 | 1.7.2.12.5 | Code | 8w | 2005-05-25 | 2005-07-20 | 61FS-5d |  |  | 46.5d | 0d | TBD SR [50%]; JP; Marc P. [50%] | 640h |  |
| 65 | 1.7.2.12.6 | Test | 3d | 2005-07-20 | 2005-07-25 | 64 |  |  | 87.5d | 14.5d | QA; JP; Ulli | 72h |  |
| 66 | 1.7.2.13 | Draft Deployment Scripts | 3d | 2005-07-20 | 2005-07-25 | 64 |  |  | 126.5d |  |  |  |  |
| 67 | 1.7.2.14 | **Construction** | 124d | 2005-05-16 | 2005-11-04 |  |  |  | 46.5d |  |  | 4556h |  |
| 68 | 1.7.2.14.1 | **Iteration 2: Submit Cancer Models** | 67.5d | 2005-05-16 | 2005-08-17 |  |  |  | 68.5d |  |  | 792h |  |
| 69 | 1.7.2.14.1.1 | Requirements Analysis | 2w | 2005-05-16 | 2005-05-30 | 57 |  |  | 68.5d | 0d | Johnita [50%]; Ulli; JP | 200h |  |
| 70 | 1.7.2.14.1.2 | Design | 2w | 2005-06-01 | 2005-06-15 | 69, 61 |  |  | 66.5d | 0d | Johnita [50%]; JP; TBD SR [50%]; Mark P. [50%] | 200h |  |
| 71 | 1.7.2.14.1.3 | Review Wireframes, including CCMG members | 5d | 2005-06-15 | 2005-06-22 | 70 |  |  | 66.5d | 20d | CCMG Members | 40h |  |
| 72 | 1.7.2.14.1.4 | Code | 3.5w | 2005-07-20 | 2005-08-12 | 64, 71 |  |  | 46.5d | 0d | TBD SR [50%]; JP; Marc P. [50%] | 280h |  |
| 73 | 1.7.2.14.1.5 | Test | 3d | 2005-08-15 | 2005-08-17 | 72, 65 |  |  | 73d | 14.5d | QA; JP; Ulli | 72h |  |
| 74 | 1.7.2.14.2 | **Iteration 3: Search Cancer Models** | 75d | 2005-05-30 | 2005-09-12 |  |  |  | 58.5d |  |  | 692h |  |
| 75 | 1.7.2.14.2.1 | Requirements Analysis | 2w | 2005-05-30 | 2005-06-13 | 69 |  |  | 76d | 0d | TBD [25%]; Ulli | 100h |  |
| 76 | 1.7.2.14.2.2 | Design | 2w | 2005-06-15 | 2005-06-29 | 75, 70 |  |  | 74d | 0d | Johnita [50%]; JP; TBD SR [50%]; Marc P. [50%] | 200h |  |
| 77 | 1.7.2.14.2.3 | Review Wireframes, including CCMG members | 5d | 2005-06-29 | 2005-07-06 | 76 |  |  | 74d | 27.5d | CCMG Members | 40h |  |
| 78 | 1.7.2.14.2.4 | Code | 3.5w | 2005-08-15 | 2005-09-07 | 72, 77, 35FF |  |  | 46.5d | 0d | TBD SR [50%]; JP; Marc P. [50%] | 280h |  |
| 79 | 1.7.2.14.2.5 | Test | 3d | 2005-09-07 | 2005-09-12 | 78, 73 |  |  | 58.5d | 12d | QA; JP; Ulli | 72h |  |

| ID | WBS | Task | Type | Duration | Start | Finish | Predecessors | Total slack | Free slack | Resources | Work |
| --- | --- | --- | --- | --- | --- | --- | --- | --- | --- | --- | --- |
| 80 | 1.7.2.14.3 | **Iteration 4: Administer System** |  | 80d | 2005-06-13 | 2005-10-03 |  | 46.5d |  |  | 652h |
| 81 | 1.7.2.14.3.1 | Requirements Analysis |  | 2w | 2005-06-13 | 2005-06-27 | 75 | 83.5d | 0d | TBD [25%]; Ulli | 100h |
| 82 | 1.7.2.14.3.2 | Design |  | 2w | 2005-06-29 | 2005-07-13 | 81, 76 | 81.5d | 0d | Johnita [50%]; JP; TBD SR [50%]; Marc P. [50%] | 200h |
| 83 | 1.7.2.14.3.3 | Review Wireframes, including CCMG members |  | 5d | 2005-07-13 | 2005-07-20 | 82 | 81.5d | 35d | CCMG Members | 40h |
| 84 | 1.7.2.14.3.4 | Code |  | 3w | 2005-09-07 | 2005-09-28 | 78, 83, 36FF | 46.5d | 0d | TBD SR [50%]; JP; Marc P. [50%] | 240h |
| 85 | 1.7.2.14.3.5 | Test |  | 3d | 2005-09-28 | 2005-10-03 | 84, 79 | 46.5d | 0d | QA; JP; Ulli | 72h |
| 86 | 1.7.2.14.4 | **Integration Testing Schedule** |  | 122d | 2005-05-18 | 2005-11-04 |  | 46.5d | 0d | QA | 2420h |
| 87 | 1.7.2.14.4.1 | **Develop Test Plan** |  | 44d | 2005-05-18 | 2005-07-19 | 49 | 124.5d |  | QA | 896h |
| 88 | 1.7.2.14.4.1.1 | Develop Iteration 1 Test Plan |  | 6d | 2005-05-18 | 2005-05-26 | 45, 57 | 162.5d |  | QA; Ulli | 96h |
| 89 | 1.7.2.14.4.1.2 | Develop Iteration 2 Test Plan |  | 6d | 2005-05-30 | 2005-06-07 | 69 | 154.5d |  | QA; Ulli | 96h |
| 90 | 1.7.2.14.4.1.3 | Develop Iteration 3 Test Plan |  | 6d | 2005-06-13 | 2005-06-21 | 75 | 144.5d |  | QA; Ulli | 96h |
| 91 | 1.7.2.14.4.1.4 | Develop Iteration 4 Test Plan |  | 6d | 2005-06-27 | 2005-07-05 | 81 | 124.5d | 0d | QA; Ulli | 96h |
| 92 | 1.7.2.14.4.1.5 | Develop Integration Test Plan |  | 10d | 2005-07-05 | 2005-07-19 | 91 | 124.5d |  | QA; Ulli | 160h |
| 93 | 1.7.2.14.4.2 | Deploy All Iterations to Development Server |  | 1d | 2005-10-03 | 2005-10-04 | 85 | 46.5d | 0d | Johnita [50%]; QA; TBD SR | 20h |
| 94 | 1.7.2.14.4.3 | Development Test All Iterations |  | 1w | 2005-10-04 | 2005-10-11 | 93 | 46.5d | 0d | Johnita [50%]; JP; QA; Ulli; TBD SR | 180h |
| 95 | 1.7.2.14.4.4 | Deploy All Iteration to Integration Test Server |  | 1d | 2005-10-11 | 2005-10-12 | 94 | 46.5d | 0d | Johnita [50%]; QA; TBD SR | 20h |
| 96 | 1.7.2.14.4.5 | Integration Test All Iterations |  | 8d | 2005-10-12 | 2005-10-24 | 95 | 46.5d | 0d | QA; Ulli | 128h |
| 97 | 1.7.2.14.4.6 | Deploy All Iterations to Staging Server |  | 1d | 2005-10-24 | 2005-10-25 | 96 | 46.5d | 0d | QA | 8h |
| 98 | 1.7.2.14.4.7 | UAT Test All Iterations |  | 8d | 2005-10-25 | 2005-11-04 | 97 | 46.5d |  | CCMG; Ulli; Fei | 192h |
| 99 | 1.7.2.15 | **Transition** |  | 5d | 2005-11-04 | 2005-11-11 | 86 | 46.5d | 0d |  | 190.67h |
| 100 | 1.7.2.15.1 | Code Freeze | milestone | 1d | 2005-11-04 | 2005-11-07 | 86 | 48.5d | 0d | Johnita [50%]; JP; TBD SR | 14.67h |
| 101 | 1.7.2.15.2 | Deploy Iteration to Production |  | 2d | 2005-11-07 | 2005-11-09 | 100 | 48.5d |  | QA | 16h |
| 102 | 1.7.2.15.3 | **Document Iteration** |  | 5d | 2005-11-04 | 2005-11-11 |  | 46.5d |  |  | 160h |
| 103 | 1.7.2.15.3.1 | Update Usage Guides |  | 1w | 2005-11-04 | 2005-11-11 | 86 | 46.5d |  | JP; Ulli | 80h |
| 104 | 1.7.2.15.3.2 | Update Design Documentation |  | 1w | 2005-11-04 | 2005-11-11 | 85 | 46.5d |  | Ulli; TBD SR | 80h |
| 105 | 1.7.3 | Milestone: Complete Version 2 | milestone | 1d | 2005-11-11 | 2005-11-14 | 99 | 46.5d |  | - | 8h |

| ID | WBS | Task | Duration | Start | Finish | Predecessors | Total slack | Free slack | Resources | Work |
| --- | --- | --- | --- | --- | --- | --- | --- | --- | --- | --- |
| 106 | 1.7.4 | **Version 2 second release** | 15d | 2005-09-30 | 2005-10-20 |  | 63d |  |  | 332h |
| 107 | 1.7.4.1 | Deploy Software to Development Server | 1d | 2005-09-30 | 2005-09-30 | 38 | 63d | 0d | Johnita [50%]; QA; TBD SR | 20h |
| 108 | 1.7.4.2 | Development Test | 3d | 2005-10-03 | 2005-10-05 | 107 | 63d | 0d | Johnita [50%]; JP; QA; Ulli; TBD SR | 108h |
| 109 | 1.7.4.3 | Deploy Software to Integration Test Server | 1d | 2005-10-06 | 2005-10-06 | 108 | 63d | 0d | Johnita [50%]; QA; TBD SR | 20h |
| 110 | 1.7.4.4 | Integration Test | 5d | 2005-10-07 | 2005-10-13 | 109 | 63d | 0d | QA; Ulli | 80h |
| 111 | 1.7.4.5 | Deploy Version 2 second release to Staging Server | 1d | 2005-10-14 | 2005-10-14 | 110 | 63d | 0d | QA | 8h |
| 112 | 1.7.4.6 | UAT Test Version 2 second release | 4d | 2005-10-17 | 2005-10-20 | 111 | 63d |  | CCMG; Ulli; Fei | 96h |
