# camod_2.1_schedule

Schedule from MS Project, 2005-12-29 to 2006-05-31, A marks actual dates.
nci

## Calendars

- Standard: Mon-Fri 08:00-12:00, 13:00-17:00; Sat-Sun off.

## Resources

| Resource |
| --- |
| CCMG |
| NCICB |
| Srini |
| CCMG Members |
| QA |
| Ulli |
| Nick |
| Team |
| David |
| Marc P. |
| Sima |
| Jill |
| Ajay |
| Derek |
| Davidi |
| Marc |
| Daviud |
| Juergen |

## Schedule

| ID | WBS | Task | Duration | Start | Finish | Predecessors | Complete | Remaining | Total slack | Free slack | Constraint | Resources | Work | Actual work |
| --- | --- | --- | --- | --- | --- | --- | --- | --- | --- | --- | --- | --- | --- | --- |
| 1 | 1 | **caMOD Version 2.1** | 109.5d | 2005-12-29 A | 2006-05-31 |  | 85% | 16.28d | 0d |  |  |  | 4126h | 2587.7h |
| 2 | 1.1 | **Inception** | 2.4d | 2005-12-29 A | 2006-01-02 A |  | 100% |  |  |  |  |  | 48h | 48h |
| 3 | 1.1.1 | Identify caMOD 2.1 requirements | 2.4d | 2005-12-29 A | 2006-01-02 A |  | 100% |  |  |  | start no earlier than 2005-12-29 | Srini [50%]; Ulli [50%]; David [50%] | 24h | 24h |
| 4 | 1.1.2 | Identify usability enhancement requirements | 2.4d | 2005-12-29 A | 2006-01-02 A |  | 100% |  |  |  |  | Srini [50%]; Ulli [50%]; David [50%] | 24h | 24h |
| 5 | 1.2 | **Elaboration** | 107.1d | 2006-01-02 A | 2006-05-31 | 2 | 74% | 27.83d | 0d |  |  |  | 600h | 384.8h |
| 6 | 1.2.1 | Draft caMOD 2.1 Test Cases | 1w | 2006-01-02 A | 2006-01-09 |  | 20% | 0.8w | 113.6d |  |  | Ulli [50%]; David [50%]; Ajay [50%] | 60h | 12h |
| 7 | 1.2.2 | Draft caMOD 2.1 Usability Enhancement Use Cases | 2w | 2006-01-02 A | 2006-01-16 |  | 20% | 1.6w | 108.6d |  |  | David [50%]; Ajay [50%]; Ulli [50%] | 120h | 24h |
| 8 | 1.2.3 | Draft caMOD 2.1 Use Cases | 2w | 2006-01-02 A | 2006-01-16 A | 2 | 100% |  |  |  |  | David [50%]; Ajay [50%]; Ulli [50%] | 120h | 120h |
| 9 | 1.2.4 | Review Use Cases, including CCMG members | 1d | 2006-01-16 A | 2006-04-13 A | 8 | 100% |  |  |  |  | CCMG Members | 8h | 8h |
| 10 | 1.2.5 | **caMOD database enhancements** | 38.5d | 2006-01-02 A | 2006-02-23 A |  | 100% |  |  |  |  |  | 140h | 140h |
| 11 | 1.2.5.1 | Consolidate all DB changes | 1w | 2006-01-02 A | 2006-01-09 A |  | 100% |  |  |  | start no earlier than 2005-06-06 | Ulli [75%]; Derek [25%] | 40h | 40h |
| 12 | 1.2.5.2 | Updated Object Model | 4w | 2006-01-09 A | 2006-02-09 A | 11 | 100% |  |  |  |  | David [50%] | 80h | 80h |
| 13 | 1.2.5.3 | Updated Data Model | 1w | 2006-02-09 A | 2006-02-16 A | 12 | 100% |  |  |  |  | David [50%] | 20h | 20h |
| 14 | 1.2.5.4 | Milestone: Completed ER document | 1w | 2006-02-16 A | 2006-02-23 A | 13 | 100% |  |  |  |  |  |  |  |
| 15 | 1.2.6 | **Interface with caDSR** | 24.5d | 2006-04-27 A | 2006-05-31 |  | 52% | 11.76d | 0d |  |  |  | 152h | 80.8h |
| 16 | 1.2.6.1 | Establish baseline documentation and prepare submission package | 1d | 2006-04-27 A | 2006-04-27 A |  | 100% |  |  |  |  | Srini; David | 16h | 16h |
| 17 | 1.2.6.2 | Annotate UML model with well formed names and definitions | 9d | 2006-05-04 A | 2006-05-19 |  | 90% | 0.9d | 0d |  | finish no earlier than 2006-05-19 | David | 72h | 64.8h |
| 18 | 1.2.6.3 | Review semantic connector output | 0.5d | 2006-05-22 | 2006-05-22 | 17 |  |  | 0d |  |  | Srini; Ulli | 8h |  |
| 19 | 1.2.6.4 | Perform semantic annotation of UML models | 2d | 2006-05-22 | 2006-05-24 | 18 |  |  | 0d |  |  | NCICB | 16h |  |
| 20 | 1.2.6.5 | Run UML loader | 1d | 2006-05-24 | 2006-05-25 | 19 |  |  | 0d |  |  | NCICB | 8h |  |
| 21 | 1.2.6.6 | Review CDEs in staging | 2d | 2006-05-25 | 2006-05-29 | 20 |  |  | 0d |  |  | NCICB | 16h |  |
| 22 | 1.2.6.7 | Curate additional metadata | 2d | 2006-05-29 | 2006-05-31 | 21 |  |  | 0d |  |  | NCICB | 16h |  |
| 23 | 1.3 | **Construction** | 107d | 2005-12-29 A | 2006-05-26 |  | 93% | 7.69d | 1.5d | 0d |  |  | 2330h | 2154.9h |
| 24 | 1.3.1 | **Iteration 1** | 107d | 2005-12-29 A | 2006-05-26 |  | 93% | 7.69d | 1.5d |  |  |  | 2330h | 2154.9h |
| 25 | 1.3.1.1 | Requirements Analysis | 3d | 2005-12-29 A | 2006-01-02 A |  | 100% |  |  |  |  | David [75%]; Sima [50%] | 30h | 30h |
| 26 | 1.3.1.2 | Design | 0.5w | 2006-01-03 A | 2006-01-05 A | 25 | 100% |  |  |  |  | David [50%]; Sima [50%] | 20h | 20h |
| 27 | 1.3.1.3 | Data cleanup | 2d | 2006-02-23 A | 2006-02-27 A | 14 | 100% |  |  |  |  | Ulli [75%]; Derek [25%] | 16h | 16h |
| 28 | 1.3.1.4 | Create schema migration scripts | 5d | 2006-02-27 A | 2006-03-06 A | 27 | 100% |  |  |  |  | Derek [75%]; Ulli [25%] | 40h | 40h |
| 29 | 1.3.1.5 | Hibernate Mapping changes | 4w | 2006-03-06 A | 2006-04-03 A | 28 | 100% |  |  |  |  | Sima [50%]; David [50%] | 160h | 160h |

| ID | WBS | Task | Duration | Start | Finish | Predecessors | Complete | Remaining | Total slack | Free slack | Constraint | Resources | Work | Actual work |
| --- | --- | --- | --- | --- | --- | --- | --- | --- | --- | --- | --- | --- | --- | --- |
| 30 | 1.3.1.6 | **Code** | 107d | 2005-12-29 A | 2006-05-26 |  | 92% | 8.63d | 1.5d | 0d |  |  | 2064h | 1888.9h |
| 31 | 1.3.1.6.1 | **caMOD usibility enhancements** | 87.5d | 2006-01-05 A | 2006-05-08 A |  | 100% |  |  |  |  |  |  |  |
| 32 | 1.3.1.6.1.1 | Change caMOD to use new EVSTree | 2d | 2006-05-03 A | 2006-05-04 A |  | 100% |  |  |  | start no earlier than 2006-05-03 |  |  |  |
| 33 | 1.3.1.6.1.2 | Change caMOD to use caBIO version 3.1 | 2d | 2006-05-05 A | 2006-05-08 A | 32 | 100% |  |  |  | start no earlier than 2006-05-04 |  |  |  |
| 34 | 1.3.1.6.1.3 | #345 - Viewing/submitting images while in https mode has nag message in IE | 2d | 2006-01-05 A | 2006-01-09 A | 26 | 100% |  |  |  |  |  |  |  |
| 35 | 1.3.1.6.2 | **caMOD RemoteAPI/GRID** | 105d | 2005-12-29 A | 2006-05-24 |  | 90% | 10d | 3.5d |  |  |  | 840h | 760h |
| 36 | 1.3.1.6.2.1 | #369 - Create remote interface for caMOD object model | 5mo | 2005-12-29 A | 2006-05-17 |  | 90% | 0.5mo | 13.5d | 0d |  | Marc | 800h | 720h |
| 37 | 1.3.1.6.2.2 | #359 - Make caMod available in the grid | 1w | 2006-05-18 A | 2006-05-24 A | 36 | 100% |  |  |  | start no earlier than 2006-01-09 | Marc | 40h | 40h |
| 38 | 1.3.1.6.3 | **caMOD enhancements** | 107d | 2005-12-29 A | 2006-05-26 |  | 91% | 9.18d | 1.5d |  |  |  | 960h | 876.9h |
| 39 | 1.3.1.6.3.1 | #43 - Gene ID in spon mutation page | 0.5d | 2006-01-24 A | 2006-01-24 A |  | 100% |  |  |  |  | Nick | 4h | 4h |
| 40 | 1.3.1.6.3.2 | #55 - Feature request - highlight keyword in search result | 1w | 2006-02-21 A | 2006-02-27 A |  | 100% |  |  |  |  | Nick | 40h | 40h |
| 41 | 1.3.1.6.3.3 | #225 - Clear Organ name on screens where it is not required | 0.5d | 2005-12-29 | 2005-12-29 |  |  |  | 114d |  |  | Sima | 4h |  |
| 42 | 1.3.1.6.3.4 | #238 - Make search result list configurable | 12.8w | 2006-02-20 A | 2006-05-18 |  | 95% | 0.64w | 6d | 0d | finish no earlier than 2006-05-18 | Nick | 474h | 448.4h |
| 43 | 1.3.1.6.3.5 | #249 - No "other" can be choose from Donor Species | 0.5d | 2006-05-19 | 2006-05-19 | 42 |  |  | 13d |  |  | Sima | 4h |  |
| 44 | 1.3.1.6.3.6 | #261 - Add the ability to save search queries for reuse | 7w | 2006-03-30 A | 2006-05-17 |  | 95% | 0.35w | 14.5d |  | start no earlier than 2006-03-30 | Nick [50%]; Sima [50%]; David [25%] | 350h | 332.5h |
| 45 | 1.3.1.6.3.7 | #272 - Add diagnosis to the summary on the histopath search page | 0.5d | 2006-03-15 A | 2006-03-15 A |  | 100% |  |  |  |  | David | 4h | 4h |
| 46 | 1.3.1.6.3.8 | #273 - Improve the way the serach text screen works -Auto completion | 6d | 2006-04-04 A | 2006-05-26 | 42 | 75% | 1.5d | 1.5d |  |  | Ajay | 48h | 36h |
| 47 | 1.3.1.6.3.9 | #289 - information if mouse is a tool mouse doesn't show up on mod char search page | 0.5d | 2006-04-03 A | 2006-04-03 A |  | 100% |  |  |  | start no earlier than 2006-02-15 | Sima | 4h | 4h |
| 48 | 1.3.1.6.3.10 | #290 - Cell Line Publication - throws uncaught connection error | 0.5d | 2006-05-16 | 2006-05-16 |  |  |  | 16d |  | start no earlier than 2006-05-16 | Nick | 4h |  |
| 49 | 1.3.1.6.3.11 | #295 - Verify all free text fields allow html markup | 1d | 2006-05-15 | 2006-05-15 |  |  |  | 10.5d |  | start no earlier than 2006-05-15 | David | 8h |  |
| 50 | 1.3.1.6.3.12 | #297 - Missed camod:shorten tag for therapeutic approaches | 0.5d | 2006-01-11 A | 2006-01-11 A | 27 | 100% |  |  |  |  | David | 4h | 4h |
| 51 | 1.3.1.6.3.13 | #302 - Allow user to search for metastasis in specific organ or for metastatic models in general on Advanced Search page | 1d | 2006-05-15 | 2006-05-15 |  |  |  | 16.5d |  | start no earlier than 2006-05-15 | Sima | 8h |  |
| 52 | 1.3.1.6.3.14 | #371 - Force/validate lowercase usernames on entry | 0.5d | 2006-05-15 A | 2006-05-15 A |  | 100% |  |  |  | start no earlier than 2006-05-15 | David | 4h | 4h |
| 53 | 1.3.1.6.4 | **caMOD database enhancements** | 31d | 2006-04-03 A | 2006-05-16 A | 29 | 100% |  |  |  |  |  | 240h | 240h |
| 54 | 1.3.1.6.4.1 | Cascade 2.1 OM changes through code | 2w | 2006-04-03 A | 2006-04-17 A |  | 100% |  |  |  |  | David | 80h | 80h |
| 55 | 1.3.1.6.4.2 | #43 - DB - Gene ID in spon mutation page | 0.5d | 2006-04-17 A | 2006-04-18 A | 54 | 100% |  |  |  |  | Nick | 4h | 4h |
| 56 | 1.3.1.6.4.3 | #249 - No "other" can be choose from Donor Species | 0.5d | 2006-04-18 A | 2006-04-18 A | 55 | 100% |  |  |  |  | Sima | 4h | 4h |
| 57 | 1.3.1.6.4.4 | #296 - DB - wrong display of targeted vs random integration of transgene and genomic segment | 1d | 2006-04-18 A | 2006-04-19 A | 56 | 100% |  |  |  |  | David | 8h | 8h |
| 58 | 1.3.1.6.4.5 | #303 - DB - Add field to publication table to store the J number | 1d | 2006-04-19 A | 2006-04-20 A | 57 | 100% |  |  |  |  |  |  |  |
| 59 | 1.3.1.6.4.6 | #326 - DB - Remove Duplicates in the taxon table and consider splitting the taxon table in species and strain table (back to what we... | 3d | 2006-04-20 A | 2006-04-25 A | 58 | 100% |  |  |  |  | David | 24h | 24h |
| 60 | 1.3.1.6.4.7 | #327 - DB - Investigate enhancing the design for organ/disease table relations | 2d | 2006-04-25 A | 2006-04-27 A | 59 | 100% |  |  |  |  | David | 16h | 16h |
| 61 | 1.3.1.6.4.8 | #328 - DB - Remove any unecessary cross-reference tables | 3d | 2006-04-27 A | 2006-05-02 A | 60 | 100% |  |  |  |  | David | 24h | 24h |
| 62 | 1.3.1.6.4.9 | #333 - DB - Tackle env factor vs agent and therapy vs carcinogenic intervention problems | 1w | 2006-05-02 A | 2006-05-09 A | 61 | 100% |  |  |  |  | David | 40h | 40h |
| 63 | 1.3.1.6.4.10 | #334 - DB - Change “tumorProgression” to “tumorResponse” in the therapy object | 0.5d | 2006-05-09 A | 2006-05-10 A | 62 | 100% |  |  |  |  | Sima | 4h | 4h |
| 64 | 1.3.1.6.4.11 | #335 - DB - The inhibition rate field in the screening_results table for the yeast data is not used. | 1d | 2006-05-10 A | 2006-05-11 A | 63 | 100% |  |  |  |  | Nick | 8h | 8h |
| 65 | 1.3.1.6.4.12 | #338 - DB - Add an other option to the drop-down list of clinical marker | 0.5d | 2006-05-11 A | 2006-05-11 A | 64 | 100% |  |  |  |  | Sima | 4h | 4h |
| 66 | 1.3.1.6.4.13 | #340 - DB - Change the relationship between animal_availibility and animal_distributor objects | 1d | 2006-05-11 A | 2006-05-12 A | 65 | 100% |  |  |  |  | Sima | 8h | 8h |
| 67 | 1.3.1.6.4.14 | #343 - DB - Change Harvest_date from a date field to a varchar | 0.5d | 2006-05-12 A | 2006-05-15 A | 66 | 100% |  |  |  |  | Sima | 4h | 4h |
| 68 | 1.3.1.6.4.15 | #346 - DB - Change MGI number to a varchar field | 0.5d | 2006-05-15 A | 2006-05-15 A | 67 | 100% |  |  |  |  | Sima | 4h | 4h |
| 69 | 1.3.1.6.4.16 | #348 - DB - Add an uncontrolledVocab for administative route to Ab Cancer Model for Xenograft. | 1d | 2006-05-15 A | 2006-05-16 A | 68 | 100% |  |  |  |  | Sima | 8h | 8h |
| 70 | 1.3.1.6.4.17 | #376 - Update caMOD for JDK 1.5 collections and change from List to Set | 1w | 2006-04-03 A | 2006-04-10 A |  | 100% |  |  |  |  |  |  |  |

| ID | WBS | Task | Type | Duration | Start | Finish | Predecessors | Complete | Remaining | Total slack | Free slack | Constraint | Resources | Work | Actual work |
| --- | --- | --- | --- | --- | --- | --- | --- | --- | --- | --- | --- | --- | --- | --- | --- |
| 71 | 1.3.1.6.5 | **EVS modifications** |  | 3d | 2006-05-17 A | 2006-05-19 |  | 50% | 1.5d | 6.5d |  |  |  | 24h | 12h |
| 72 | 1.3.1.6.5.1 | #281 - EVS Tree - utilize the staining vocabulary |  | 3d | 2006-05-17 A | 2006-05-19 |  | 50% | 1.5d | 6.5d |  | start no earlier than 2006-05-17 | David | 24h | 12h |
| 73 | 1.3.2 | Milestone: coding completed | milestone | 0d | 2006-05-26 | 2006-05-26 | 30 |  |  | 1.5d |  |  | David [25%] |  |  |
| 74 | 1.4 | **Integration Testing Schedule** |  | 107.5d | 2005-12-29 | 2006-05-29 |  |  |  | 2d |  |  | QA | 1132h |  |
| 75 | 1.4.1 | **Develop Test Plan** |  | 10d | 2005-12-29 | 2006-01-11 |  |  |  | 99.5d |  |  | QA | 224h |  |
| 76 | 1.4.1.1 | Develop release Test Plan |  | 2d | 2005-12-29 | 2005-12-30 |  |  |  | 107.5d |  |  | QA; Davidi [50%] | 24h |  |
| 77 | 1.4.1.2 | Develop Integration Test Plan |  | 10d | 2005-12-29 | 2006-01-11 |  |  |  | 99.5d |  |  | QA; David [50%] | 120h |  |
| 78 | 1.4.2 | Deploy to Development Server | milestone | 0d | 2006-05-19 | 2006-05-19 |  |  |  | 6.5d | 0d | start no earlier than 2006-05-19 | QA |  |  |
| 79 | 1.4.3 | Development Test |  | 2d | 2006-05-19 | 2006-05-22 | 78 |  |  | 6.5d |  |  | QA; Juergen | 32h |  |
| 80 | 1.4.4 | Deploy to Staging Server |  | 1d | 2006-05-26 | 2006-05-26 |  |  |  | 1d | 0d | start no earlier than 2006-05-26 | QA | 8h |  |
| 81 | 1.4.5 | Test on Staging Server |  | 0.5d | 2006-05-29 | 2006-05-29 | 80 |  |  | 1d | 0d | start no earlier than 2006-05-26 | QA; Juergen | 8h |  |
| 82 | 1.5 | **Transition** |  | 2d | 2006-05-29 | 2006-05-30 |  |  |  | 0.5d |  |  |  | 16h |  |
| 83 | 1.5.1 | Milestone: Test All Iterations | milestone | 0d | 2006-05-29 | 2006-05-29 | 81 |  |  | 1d | 0.5d |  | CCMG; Ulli |  |  |
| 84 | 1.5.2 | Milestone: Code Freeze |  | 1d | 2006-05-29 | 2006-05-29 | 23 |  |  | 1.5d |  |  | David | 8h |  |
| 85 | 1.5.3 | Milestone: Deploy Iteration to Production |  | 1d | 2006-05-30 | 2006-05-30 | 83 |  |  | 0.5d | 0d | start no earlier than 2006-05-30 | QA | 8h |  |
| 86 | 1.6 | Milestone: Complete Version 2.1 | milestone | 0d | 2006-05-30 | 2006-05-30 | 85 |  |  | 0.5d |  |  | QA; Juergen |  |  |
