# caMOD 2.2

Schedule from MS Project, 2006-06-26 to 2006-11-21, A marks actual dates.
SAIC

## Calendars

- Standard: Mon-Fri 08:00-12:00, 13:00-17:00; Sat-Sun off.

## Resources

| Resource |
| --- |
| GuruswamiS |
| NCICB |
| BasuA |
| WagnerU |
| QA |
| PandyaS |
| DBA |

## Schedule

| ID | WBS | Task | Type | Duration | Start | Finish | Predecessors | Complete | Remaining | Total slack | Free slack | Resources | Work | Actual work |
| --- | --- | --- | --- | --- | --- | --- | --- | --- | --- | --- | --- | --- | --- | --- |
| 1 | 1 | **caMOD 2.2 Release** |  | 107d | 2006-06-26 A | 2006-11-21 |  | 2% | 105.38d | 0d |  |  | 2514h | 40h |
| 2 | 1.1 | **Project Management and Control** |  | 80d | 2006-06-26 | 2006-10-13 |  |  |  | 32d |  |  | 1280h |  |
| 3 | 1.1.1 | Project Management |  | 80d | 2006-06-26 | 2006-10-13 |  |  |  | 15d |  | GuruswamiS | 640h |  |
| 4 | 1.1.2 | Project Control |  | 80d | 2006-06-26 | 2006-10-13 |  |  |  | 15d |  | GuruswamiS | 640h |  |
| 5 | 1.2 | **Inception Phase** |  | 21d | 2006-06-26 A | 2006-07-24 |  | 16% | 17.61d | 91d |  |  | 248h | 40h |
| 6 | 1.2.1 | **Requirements Gathering** |  | 6d | 2006-06-26 | 2006-07-03 |  |  |  | 0d |  |  | 88h |  |
| 7 | 1.2.1.1 | NCICB/MMHCC team |  | 1w | 2006-06-26 | 2006-06-30 |  |  |  | 0d |  | NCICB | 40h |  |
| 8 | 1.2.1.2 | Determine Basic Use Cases |  | 1w | 2006-06-26 | 2006-06-30 |  |  |  | 0d |  | NCICB | 40h |  |
| 9 | 1.2.1.3 | Prioritize Use Cases |  | 1d | 2006-07-03 | 2006-07-03 | 7, 8 |  |  | 0d |  | NCICB | 8h |  |
| 10 | 1.2.2 | **Documentation** |  | 21d | 2006-06-26 A | 2006-07-24 |  | 25% | 15.75d | 91d |  |  | 160h | 40h |
| 11 | 1.2.2.1 | Draft Project Plan |  | 5d | 2006-06-26 A | 2006-06-30 A |  | 100% |  |  |  | GuruswamiS | 40h | 40h |
| 12 | 1.2.2.2 | Draft Requirements Specification Document |  | 1w | 2006-07-04 | 2006-07-10 | 9 |  |  | 0d |  | WagnerU | 40h |  |
| 13 | 1.2.2.3 | Draft Test Plan |  | 1w | 2006-07-11 | 2006-07-17 | 12 |  |  | 59d | 0d | QA | 40h |  |
| 14 | 1.2.2.4 | Draft Test Cases |  | 1w | 2006-07-18 | 2006-07-24 | 13 |  |  | 59d |  | QA | 40h |  |
| 15 | 1.2.3 | Milestone: General Requirements Captured & Priortized | milestone | 0d | 2006-07-10 | 2006-07-10 | 12 |  |  | 0d |  | BasuA |  |  |
| 16 | 1.3 | **Elaboration Phase** |  | 74d | 2006-07-10 | 2006-10-20 |  |  |  | 0d |  |  | 986h |  |
| 17 | 1.3.1 | **Architecture** |  | 6d | 2006-07-10 | 2006-07-18 |  |  |  | 0d |  |  | 48h |  |
| 18 | 1.3.1.1 | Internal review with MMHCC Team | milestone | 0d | 2006-07-10 | 2006-07-10 | 15 |  |  | 0d |  | NCICB |  |  |
| 19 | 1.3.1.2 | Incorporate Comments/Feedback from the team review |  | 1d | 2006-07-11 | 2006-07-11 | 18 |  |  | 0d |  | WagnerU | 8h |  |
| 20 | 1.3.1.3 | Review use cases / design with the "Review Board" | milestone | 0d | 2006-07-11 | 2006-07-11 | 19 |  |  | 0d |  | PandyaS |  |  |
| 21 | 1.3.1.4 | Draft design document (caBIG template) |  | 1w | 2006-07-12 | 2006-07-18 | 20 |  |  | 0d |  | PandyaS | 40h |  |
| 22 | 1.3.1.5 | Milestone: Completed Design document | milestone | 0d | 2006-07-18 | 2006-07-18 | 21 |  |  | 0d |  | BasuA |  |  |
| 23 | 1.3.2 | **Itreration 1: Bug fixes & usability enhancements** |  | 23d | 2006-07-19 | 2006-08-18 | 22 |  |  | 13d |  |  | 264h |  |
| 24 | 1.3.2.1 | Add search for models with images |  | 3d | 2006-07-19 | 2006-07-21 |  |  |  | 45d | 0d | GuruswamiS | 24h |  |
| 25 | 1.3.2.2 | Add toolmouse search to advanced search page |  | 2d | 2006-07-24 | 2006-07-25 | 24 |  |  | 45d | 0d | PandyaS | 16h |  |
| 26 | 1.3.2.3 | indicating if a record has associated microarray data and/or images |  | 1w | 2006-07-26 | 2006-08-01 | 25 |  |  | 45d | 0d | PandyaS | 40h |  |
| 27 | 1.3.2.4 | Application should be able to hande knock down experiments (siRNA and morpholino oligonucleotide) |  | 1w | 2006-08-02 | 2006-08-08 | 26 |  |  | 45d | 0d | PandyaS | 40h |  |
| 28 | 1.3.2.5 | SuperUser should be allowed to change the state (incomplete, complete etc) and assignements of every model |  | 4d | 2006-08-09 | 2006-08-14 | 27 |  |  | 45d | 0d | PandyaS | 32h |  |
| 29 | 1.3.2.6 | Give superuser the options to delete and duplicate record |  | 4d | 2006-08-15 | 2006-08-18 | 28 |  |  | 45d |  | PandyaS | 32h |  |
| 30 | 1.3.2.7 | Find MGI numbers for existing allele records |  | 2w | 2006-07-19 | 2006-08-01 |  |  |  | 13d |  | WagnerU | 80h |  |

| ID | WBS | Task | Duration | Start | Finish | Predecessors | Total slack | Resources | Work |
| --- | --- | --- | --- | --- | --- | --- | --- | --- | --- |
| 31 | 1.3.3 | **Iteration 2: JAX Integration** | 68d | 2006-07-19 | 2006-10-20 |  | 0d |  | 674h |
| 32 | 1.3.3.1 | Draft design document (caBIG template) | 1w | 2006-07-19 | 2006-07-25 | 22 | 0d | WagnerU | 40h |
| 33 | 1.3.3.2 | caMOD Object model changes | 3d | 2006-07-26 | 2006-07-28 | 32 | 0d | WagnerU | 24h |
| 34 | 1.3.3.3 | Map JAX data elements and devise a strategy for loading data | 1w | 2006-07-31 | 2006-08-04 | 33 | 0d | WagnerU | 40h |
| 35 | 1.3.3.4 | Provide additional data from MGI - Parsing MGI data | 1w | 2006-08-07 | 2006-08-11 | 34 | 0d | WagnerU | 40h |
| 36 | 1.3.3.5 | Data Issue - complete the record submitted by the intramural community | 5d | 2006-08-14 | 2006-08-18 | 35 | 0d | WagnerU | 40h |
| 37 | 1.3.3.6 | **Code** | 45d | 2006-08-21 | 2006-10-20 | 36, 35 | 0d |  | 490h |
| 38 | 1.3.3.6.1 | Develop data loading scripts | 1w | 2006-08-21 | 2006-08-25 |  | 45d | DBA | 40h |
| 39 | 1.3.3.6.2 | Implement UI, Middle tier | 9w | 2006-08-21 | 2006-10-20 | 30 | 0d | PandyaS; WagnerU [25%] | 450h |
| 40 | 1.4 | **Transition Phase** | 22d | 2006-10-23 | 2006-11-21 | 16 | 0d |  |  |
| 41 | 1.4.1 | **QA** | 5d | 2006-10-23 | 2006-10-27 |  | 0d |  |  |
| 42 | 1.4.1.1 | Finalize Testplan | 1w | 2006-10-23 | 2006-10-27 |  | 0d |  |  |
| 43 | 1.4.1.2 | Finalize Test Cases | 1w | 2006-10-23 | 2006-10-27 |  | 0d |  |  |
| 44 | 1.4.2 | **Deploy** | 17d | 2006-10-30 | 2006-11-21 | 41 | 0d |  |  |
| 45 | 1.4.2.1 | **QA Server Deployment** | 10d | 2006-10-30 | 2006-11-10 |  | 0d |  |  |
| 46 | 1.4.2.1.1 | QA Testing | 2w | 2006-10-30 | 2006-11-10 |  | 0d |  |  |
| 47 | 1.4.2.2 | **Staging Server Deployment** | 5d | 2006-11-13 | 2006-11-17 |  | 0d |  |  |
| 48 | 1.4.2.2.1 | Staging Testing | 1w | 2006-11-13 | 2006-11-17 | 46 | 0d |  |  |
| 49 | 1.4.2.3 | **Production Server Deployment** | 2d | 2006-11-20 | 2006-11-21 |  | 0d |  |  |
| 50 | 1.4.2.3.1 | Production Verification | 2d | 2006-11-20 | 2006-11-21 | 48 | 0d |  |  |
