# caMOD FY005 03042005

Schedule from MS Project, 2004-12-09 to 2006-01-17, A marks actual dates.
NCI/NIH

## Calendars

- Standard: Mon-Fri 08:00-12:00, 13:00-17:00; Sat-Sun off.

## Resources

| Resource |
| --- |
| CCMG |
| Sharon |
| Johnita |
| Marguerite |
| NCICB |
| QA |
| Ulli |
| Fei |
| Alex |
| Richard |
| TBD |
| Marc P. |
| CCMG Members |
| Nick |
| Srini |

## Schedule

| ID | WBS | Task | Duration | Start | Finish | Predecessors | Complete | Remaining | Total slack | Free slack | Constraint | Resources | Work | Actual work |
| --- | --- | --- | --- | --- | --- | --- | --- | --- | --- | --- | --- | --- | --- | --- |
| 1 | 1 | **MMHCC FY005** | 289d | 2004-12-09 A | 2006-01-17 |  | 31% | 199.86d | 0d |  |  |  | 5527.87h | 1079.36h |
| 2 | 1.1 | **Inception** | 23d | 2004-12-09 A | 2005-01-10 |  | 99% | 0.19d | 266d |  |  |  | 364h | 362h |
| 3 | 1.1.1 | Identify Project Requirements | 1.5w | 2004-12-09 A | 2004-12-20 A |  | 100% |  |  |  |  | CCMG | 60h | 60h |
| 4 | 1.1.2 | Determine Level of Effort/Requirement | 2w | 2004-12-09 A | 2004-12-22 A |  | 100% |  |  |  |  | Sharon; Johnita | 160h | 160h |
| 5 | 1.1.3 | Prioritize Project Requirements | 3d | 2004-12-23 A | 2004-12-27 A | 4 | 100% |  |  |  |  | CCMG | 24h | 24h |
| 6 | 1.1.4 | Determine Project Scope | 1w | 2004-12-28 A | 2005-01-03 A | 5 | 100% |  |  |  |  | Sharon; Marguerite | 80h | 80h |
| 7 | 1.1.5 | Update Project Plan | 1w | 2005-01-04 A | 2005-01-10 | 6 | 95% | 0.05w | 266d |  |  | Sharon | 40h | 38h |
| 8 | 1.2 | **caMOD Defect Fixes** | 87d | 2005-01-05 A | 2005-05-05 |  | 95% | 4.48d | 23.46d | 0d |  |  | 408h | 368h |
| 9 | 1.2.1 | Yeast Data | 16.4w | 2005-01-05 A | 2005-04-28 A |  | 100% |  |  |  | finish no earlier than 2005-02-21 | Johnita [50%] | 328h | 328h |
| 10 | 1.2.2 | Xenograft/Alograft Data | 2w | 2005-01-05 A | 2005-04-28 A |  | 100% |  |  |  | finish no earlier than 2005-02-21 | Johnita [50%] | 40h | 40h |
| 11 | 1.2.3 | Test / Deploy yeast & xenograft fixes | 5d | 2005-04-29 | 2005-05-05 | 10 |  |  | 10.42d | 10d | start no earlier than 2005-04-25 | Johnita [50%]; Srini [25%]; Ulli [25%] | 40h |  |
| 12 | 1.3 | **CCB Meetings** | 236d | 2005-02-22 A | 2006-01-17 |  | 8% | 216.33d | 0d |  |  |  |  |  |
| 13 | 1.3.1 | February Meeting | 1d | 2005-02-22 A | 2005-02-22 A |  | 100% |  |  |  | start no earlier than 2005-02-22 |  |  |  |
| 14 | 1.3.2 | March Meeting | 1d | 2005-03-15 | 2005-03-15 |  |  |  | 220d |  | start no earlier than 2005-03-15 |  |  |  |
| 15 | 1.3.3 | April Meeting | 1d | 2005-04-19 | 2005-04-19 |  |  |  | 195d |  | start no earlier than 2005-04-19 |  |  |  |
| 16 | 1.3.4 | May Meeting | 1d | 2005-05-10 | 2005-05-10 |  |  |  | 180d |  | start no earlier than 2005-05-10 |  |  |  |
| 17 | 1.3.5 | June Meeting | 1d | 2005-06-21 | 2005-06-21 |  |  |  | 150d |  | start no earlier than 2005-06-21 |  |  |  |
| 18 | 1.3.6 | July Meeting | 1d | 2005-07-19 | 2005-07-19 |  |  |  | 130d |  | start no earlier than 2005-07-19 |  |  |  |
| 19 | 1.3.7 | August Meeting | 1d | 2005-08-16 | 2005-08-16 |  |  |  | 110d |  | start no earlier than 2005-08-16 |  |  |  |
| 20 | 1.3.8 | September Meeting | 1d | 2005-09-20 | 2005-09-20 |  |  |  | 85d |  | start no earlier than 2005-09-20 |  |  |  |
| 21 | 1.3.9 | October Meeting | 1d | 2005-10-18 | 2005-10-18 |  |  |  | 65d |  | start no earlier than 2005-10-18 |  |  |  |
| 22 | 1.3.10 | November Meeting | 1d | 2005-11-15 | 2005-11-15 |  |  |  | 45d |  | start no earlier than 2005-11-15 |  |  |  |
| 23 | 1.3.11 | December Meeting | 1d | 2005-12-20 | 2005-12-20 |  |  |  | 20d |  | start no earlier than 2005-12-20 |  |  |  |
| 24 | 1.3.12 | January, 2006 Meeting | 1d | 2006-01-17 | 2006-01-17 |  |  |  | 0d |  | start no earlier than 2006-01-17 |  |  |  |

| ID | WBS | Task | Duration | Start | Finish | Predecessors | Complete | Remaining | Total slack | Free slack | Constraint | Resources | Work | Actual work |
| --- | --- | --- | --- | --- | --- | --- | --- | --- | --- | --- | --- | --- | --- | --- |
| 25 | 1.4 | **caMOD Enhancements (2-Tier)** | 16d | 2005-05-05 A | 2005-05-26 |  | 28% | 11.5d | 168d |  |  |  | 102.4h | 36h |
| 26 | 1.4.1 | Fix urgent / high priority defects in Test Track | 1w | 2005-05-05 A | 2005-05-11 |  | 90% | 0.1w | 168d | 0d | start no earlier than 2005-05-05 | Nick [60%] | 38.4h | 36h |
| 27 | 1.4.2 | Test all changes implemented in this interation | 6d | 2005-05-12 | 2005-05-19 | 26 |  |  | 168d | 0d |  | Ulli [50%] | 24h |  |
| 28 | 1.4.3 | Deploy Iteration to Production | 5d | 2005-05-20 | 2005-05-26 | 27, 11 |  |  | 168d |  |  | QA | 40h |  |
| 29 | 1.5 | **caMOD Version 2 caBIG Silver Compliance (N-Tier)** | 183.5d | 2005-01-26 A | 2005-10-10 | 8 | 13% | 159.54d | 71.5d |  |  |  | 3801.47h | 313.36h |
| 30 | 1.5.1 | **Inception** | 5d | 2005-01-26 A | 2005-02-01 A |  | 100% |  |  |  |  |  | 80h | 80h |
| 31 | 1.5.1.1 | Identify caMOD caBIG Silver (N-Tier) Requirements | 1w | 2005-01-26 A | 2005-02-01 A |  | 100% |  |  |  |  | CCMG; NCICB | 80h | 80h |
| 32 | 1.5.2 | **Elaboration** | 86d | 2005-02-09 A | 2005-06-08 | 30 | 34% | 56.42d | 159d |  |  |  | 635.87h | 221.36h |
| 33 | 1.5.2.1 | Draft caMOD caBIG Silver (N-Tier) Use Cases | 4w | 2005-02-09 A | 2005-05-20 |  | 80% | 0.8w | 3.5d | 0d |  | Johnita [50%]; Srini [50%] | 120.67h | 90h |
| 34 | 1.5.2.2 | Review Use Cases, including CCMG members | 1d | 2005-02-28 A | 2005-05-26 | 33FS+3d | 30% | 0.7d | 163.8d | 0d |  | CCMG Members | 8h | 2.4h |
| 35 | 1.5.2.3 | Draft caMOD caBIG Silver (N-Tier) Test Cases | 1w | 2005-05-26 | 2005-06-02 | 34 |  |  | 163.8d |  |  | QA [50%]; Ulli [50%]; Nick [50%] | 60h |  |
| 36 | 1.5.2.4 | Determine caMOD Terminology Sources | 1w | 2005-02-22 A | 2005-05-06 |  | 90% | 0.1w | 182.5d |  |  | Ulli | 40h | 36h |
| 37 | 1.5.2.5 | Use of Common Security Manager | 1w | 2005-05-20 | 2005-05-27 | 33 |  |  | 54.5d | 4d |  | Johnita [50%]; Ulli [15%] | 26h |  |
| 38 | 1.5.2.6 | Draft Architecture | 2w | 2005-02-23 A | 2005-05-23 | 33 | 90% | 0.2w | 14.5d | 0d |  | Johnita [50%] | 40h | 36h |
| 39 | 1.5.2.7 | Architecture Whiteboard Discussion | 1d | 2005-05-06 | 2005-05-06 | 38SS+4d |  |  | 177d | 0d |  |  |  |  |
| 40 | 1.5.2.8 | Review architecture with the "Review Board" | 1d | 2005-05-09 | 2005-05-09 | 39 |  |  | 181d |  |  |  |  |  |
| 41 | 1.5.2.9 | Draft User Interface Components | 1w | 2005-05-02 A | 2005-05-24 | 33 | 60% | 0.4w | 69.5d | 0d | finish no earlier than 2005-05-09 | Srini [50%]; Nick | 60h | 48h |
| 42 | 1.5.2.10 | Review Draft User Interface, including CCMG members | 5d | 2005-05-24 | 2005-05-31 | 41 |  |  | 165.5d |  |  | CCMG Members | 40h |  |
| 43 | 1.5.2.11 | **Tool Kit Exetension** | 67d | 2005-02-22 A | 2005-05-25 |  | 7% | 62.13d | 169d |  |  |  | 123.2h | 8.96h |
| 44 | 1.5.2.11.1 | Determine use of automatic code generator | 8d | 2005-02-22 A | 2005-05-16 |  | 20% | 6.4d | 176.6d |  |  | Marc P. [50%]; Johnita [20%] | 44.8h | 8.96h |
| 45 | 1.5.2.11.2 | Complete Tool Kit Extension | 14d | 2005-05-06 | 2005-05-25 |  |  |  | 169d |  |  | Marc P. [50%]; Johnita [20%] | 78.4h |  |
| 46 | 1.5.2.12 | Draft Updated Object Model | 2w | 2005-05-23 | 2005-06-08 | 38 |  |  | 159d |  |  | Marc P. [50%]; TBD [25%] | 58h |  |
| 47 | 1.5.2.13 | Draft Updated Data Model | 2w | 2005-05-23 | 2005-06-06 | 38 |  |  | 161.5d |  |  | Marc P. [50%]; TBD [25%] | 60h |  |
| 48 | 1.5.3 | **Construction** | 132.5d | 2005-03-30 A | 2005-09-30 |  | 1% | 131.46d | 77.5d |  |  |  | 2938h | 12h |
| 49 | 1.5.3.1 | **Iteration 1: Architecture Prototype (Evolutionary Prototype)** | 75.5d | 2005-03-30 A | 2005-07-13 |  | 3% | 73.14d | 134.5d |  |  |  | 332h | 12h |
| 50 | 1.5.3.1.1 | **Requirements Analysis** | 10d | 2005-05-20 | 2005-06-03 | 33 |  |  | 3.5d | 0d |  |  | 46h |  |
| 51 | 1.5.3.1.1.1 | Requirements Outline | 7d | 2005-05-20 | 2005-05-31 |  |  |  | 3.5d | 0d |  | Ulli [50%] | 28h |  |
| 52 | 1.5.3.1.1.2 | Complete Requirements Analysis | 3d | 2005-05-31 | 2005-06-03 | 51, 37FF+1d |  |  | 3.5d |  |  | Ulli [50%]; TBD [25%] | 18h |  |
| 53 | 1.5.3.1.2 | Design | 3w | 2005-05-31 | 2005-06-21 | 51, 38FS-5d |  |  | 3.5d | 0d |  | Marc P. [50%]; TBD [25%] | 90h |  |
| 54 | 1.5.3.1.3 | Review Wireframes, including CCMG members | 5d | 2005-03-30 A | 2005-06-24 | 53, 41 | 30% | 3.5d | 147d |  |  | CCMG Members | 40h | 12h |
| 55 | 1.5.3.1.4 | Code | 3w | 2005-06-17 | 2005-07-08 | 53FS-2d |  |  | 3.5d | 0d |  | Marc P. [50%]; Nick | 120h |  |
| 56 | 1.5.3.1.5 | Test | 3d | 2005-07-08 | 2005-07-13 | 55 |  |  | 91.37d | 12d |  | QA; Ulli [50%] | 36h |  |
| 57 | 1.5.3.2 | Draft Deployment Scripts | 3d | 2005-07-08 | 2005-07-13 | 55 |  |  | 134.5d |  |  | TBD [25%] | 6h |  |

| ID | WBS | Task | Duration | Start | Finish | Predecessors | Total slack | Free slack | Resources | Work |
| --- | --- | --- | --- | --- | --- | --- | --- | --- | --- | --- |
| 58 | 1.5.3.3 | **Iteration 2: Submit Cancer Models** | 43d | 2005-06-03 | 2005-08-03 |  | 3.5d |  |  | 316h |
| 59 | 1.5.3.3.1 | Requirements Analysis | 2w | 2005-06-03 | 2005-06-17 | 50 | 3.5d | 0d | Ulli [75%]; TBD [50%] | 80h |
| 60 | 1.5.3.3.2 | Design | 2w | 2005-06-17 | 2005-07-01 | 59 | 3.5d | 0d | TBD [50%] | 40h |
| 61 | 1.5.3.3.3 | Review Wireframes, including CCMG members | 5d | 2005-07-01 | 2005-07-08 | 60 | 3.5d | 0d | CCMG Members | 40h |
| 62 | 1.5.3.3.4 | Code | 3w | 2005-07-08 | 2005-07-29 | 61, 55 | 3.5d | 0d | Marc P. [50%]; Nick | 120h |
| 63 | 1.5.3.3.5 | Test | 3d | 2005-07-29 | 2005-08-03 | 62, 56 | 79.37d | 12d | QA; Ulli [50%] | 36h |
| 64 | 1.5.3.4 | **Iteration 3: Search Cancer Models** | 48d | 2005-06-17 | 2005-08-24 |  | 3.5d |  |  | 356h |
| 65 | 1.5.3.4.1 | Requirements Analysis | 2w | 2005-06-17 | 2005-07-01 | 59 | 55.5d | 0d | TBD [50%]; Ulli [75%] | 80h |
| 66 | 1.5.3.4.2 | Design | 2w | 2005-07-01 | 2005-07-15 | 65, 60 | 55.5d | 0d | Marc P. [50%]; TBD [50%] | 80h |
| 67 | 1.5.3.4.3 | Review Wireframes, including CCMG members | 5d | 2005-07-15 | 2005-07-22 | 66 | 55.5d | 5d | CCMG Members | 40h |
| 68 | 1.5.3.4.4 | Code | 3w | 2005-07-29 | 2005-08-19 | 62, 67 | 3.5d | 0d | Marc P. [50%]; Nick | 120h |
| 69 | 1.5.3.4.5 | Test | 3d | 2005-08-19 | 2005-08-24 | 68, 63 | 3.5d | 0d | QA; Ulli [50%] | 36h |
| 70 | 1.5.3.5 | **Integration Testing Schedule** | 93d | 2005-05-24 | 2005-09-30 |  | 3.5d | 0d | QA | 1928h |
| 71 | 1.5.3.5.1 | **Develop Test Plan** | 34d | 2005-05-24 | 2005-07-11 | 41 | 62.5d |  | QA | 608h |
| 72 | 1.5.3.5.1.1 | Develop Iteration 1 Test Plan | 6d | 2005-06-03 | 2005-06-13 | 50 | 144.5d |  | QA; Ulli [50%] | 72h |
| 73 | 1.5.3.5.1.2 | Develop Iteration 2 Test Plan | 6d | 2005-06-17 | 2005-06-27 | 59 | 134.5d |  | QA; Ulli [50%] | 72h |
| 74 | 1.5.3.5.1.3 | Develop Iteration 3 Test Plan | 6d | 2005-07-01 | 2005-07-11 | 65 | 124.5d |  | QA; Ulli [50%] | 72h |
| 75 | 1.5.3.5.1.4 | Develop Integration Test Plan | 10d | 2005-05-24 | 2005-06-07 |  | 148.5d |  | QA; Ulli [50%] | 120h |
| 76 | 1.5.3.5.2 | Deploy All Iterations to Development Server | 1d | 2005-08-24 | 2005-08-25 | 69 | 3.5d | 0d | QA; TBD [50%] | 12h |
| 77 | 1.5.3.5.3 | Development Test All Iterations | 8d | 2005-08-25 | 2005-09-06 | 76 | 3.5d | 0d | QA; Ulli; TBD [50%]; Nick | 224h |
| 78 | 1.5.3.5.4 | Deploy All Iteration to Integration Test Server | 1d | 2005-09-06 | 2005-09-07 | 77 | 3.5d | 0d | QA; TBD [50%] | 12h |
| 79 | 1.5.3.5.5 | Integration Test All Iterations | 8d | 2005-09-07 | 2005-09-19 | 78, 75 | 3.5d | 0d | QA; Ulli | 128h |
| 80 | 1.5.3.5.6 | Deploy All Iterations to Staging Server | 1d | 2005-09-19 | 2005-09-20 | 79 | 3.5d | 0d | QA | 8h |
| 81 | 1.5.3.5.7 | UAT Test All Iterations | 8d | 2005-09-20 | 2005-09-30 | 80 | 3.5d |  | CCMG; Ulli; Fei | 192h |

| ID | WBS | Task | Type | Duration | Start | Finish | Predecessors | Total slack | Free slack | Resources | Work |
| --- | --- | --- | --- | --- | --- | --- | --- | --- | --- | --- | --- |
| 82 | 1.5.4 | **Transition** |  | 5d | 2005-09-30 | 2005-10-07 | 70 | 3.5d | 0d |  | 139.6h |
| 83 | 1.5.4.1 | Code Freeze | milestone | 1d | 2005-09-30 | 2005-10-03 | 70 | 5.5d | 0d | TBD [50%]; Nick | 12h |
| 84 | 1.5.4.2 | Deploy Iteration to Production |  | 2d | 2005-10-03 | 2005-10-05 | 83 | 5.5d |  | QA | 16h |
| 85 | 1.5.4.3 | **Document Iteration** |  | 5d | 2005-09-30 | 2005-10-07 |  | 3.5d |  |  | 111.6h |
| 86 | 1.5.4.3.1 | Update User Guides |  | 5d | 2005-09-30 | 2005-10-07 | 70 | 3.5d |  | Ulli; Nick [50%] | 44h |
| 87 | 1.5.4.3.2 | Update technical / design documentation |  | 5d | 2005-09-30 | 2005-10-07 | 69 | 3.5d |  | Ulli [50%]; TBD [50%]; Srini [50%] | 49.6h |
| 88 | 1.5.4.3.3 | Regenerate JavaDocs |  | 0.25d | 2005-09-30 | 2005-09-30 | 70 | 45.25d |  | Nick | 2h |
| 89 | 1.5.4.3.4 | Create Release Notes |  | 0.5d | 2005-09-30 | 2005-09-30 | 70 | 6.5d | 0d | Srini | 4h |
| 90 | 1.5.4.3.5 | Create Known Issues document |  | 0.5d | 2005-10-03 | 2005-10-03 | 89 | 6.5d | 0d | Srini | 4h |
| 91 | 1.5.4.3.6 | Create Fixed defects document |  | 0.5d | 2005-10-03 | 2005-10-03 | 90 | 6.5d | 0d | Srini | 4h |
| 92 | 1.5.4.3.7 | Create What's New Document |  | 0.5d | 2005-10-04 | 2005-10-04 | 91 | 6.5d |  | Srini | 4h |
| 93 | 1.5.5 | Milestone: Complete Version 2 | milestone | 1d | 2005-10-07 | 2005-10-10 | 82 | 3.5d | 0d | Srini | 8h |
| 94 | 1.6 | **caMOD Version 2.1** |  | 68d | 2005-10-10 | 2006-01-12 |  | 3.5d |  |  | 852h |
| 95 | 1.6.1 | **Inception** |  | 6d | 2005-10-10 | 2005-10-18 | 93 | 3.5d |  |  | 48h |
| 96 | 1.6.1.1 | Identify caMOD 2.1 requirements |  | 3d | 2005-10-10 | 2005-10-13 |  | 3.5d | 0d | Srini [50%]; TBD [50%]; Ulli [50%] | 24h |
| 97 | 1.6.1.2 | Identify usability enhancement requirements |  | 3d | 2005-10-13 | 2005-10-18 | 96 | 3.5d | 0d | Srini [50%]; TBD [50%]; Ulli [50%] | 24h |
| 98 | 1.6.2 | **Elaboration** |  | 6d | 2005-10-18 | 2005-10-26 | 97 | 3.5d |  |  | 80h |
| 99 | 1.6.2.1 | Draft caMOD 2.1 Use Cases |  | 1w | 2005-10-18 | 2005-10-25 |  | 3.5d | 0d | TBD | 40h |
| 100 | 1.6.2.2 | Review Use Cases, including CCMG members |  | 1d | 2005-10-25 | 2005-10-26 | 99 | 59.5d |  |  |  |
| 101 | 1.6.2.3 | Draft caMOD 2.1 Test Cases |  | 1w | 2005-10-18 | 2005-10-25 |  | 60.5d |  | Ulli [50%]; Nick [50%] | 40h |
| 102 | 1.6.3 | **Construction** |  | 54d | 2005-10-25 | 2006-01-09 |  | 3.5d | 0d |  | 680h |
| 103 | 1.6.3.1 | **Iteration 1: Administration Module** |  | 38d | 2005-10-25 | 2005-12-16 |  | 3.5d |  |  | 316h |
| 104 | 1.6.3.1.1 | Requirements Analysis |  | 2w | 2005-10-25 | 2005-11-08 | 99 | 3.5d | 0d | TBD [50%]; Ulli [75%] | 80h |
| 105 | 1.6.3.1.2 | Design |  | 2w | 2005-11-08 | 2005-11-22 | 104 | 3.5d | 0d | Marc P. [50%]; TBD [50%] | 80h |
| 106 | 1.6.3.1.3 | Code |  | 3w | 2005-11-22 | 2005-12-13 | 105 | 3.5d | 0d | Marc P. [50%]; Nick | 120h |
| 107 | 1.6.3.1.4 | Test |  | 3d | 2005-12-13 | 2005-12-16 | 106 | 3.5d | 0d | QA; Ulli [50%] | 36h |
| 108 | 1.6.3.2 | Develop Iteration 4 Test Plan |  | 2d | 2005-10-25 | 2005-10-27 | 101 | 55.5d |  | QA; Ulli [50%] | 24h |
| 109 | 1.6.3.3 | Deploy Iteration to Development Server |  | 1d | 2005-12-16 | 2005-12-19 | 107 | 3.5d | 0d | QA; TBD [50%] | 12h |
| 110 | 1.6.3.4 | Development Test this Iteration |  | 5d | 2005-12-19 | 2005-12-26 | 109 | 3.5d | 0d | QA; Ulli; TBD [50%]; Nick | 140h |
| 111 | 1.6.3.5 | Deploy Iteration to Integration Test Server |  | 1d | 2005-12-26 | 2005-12-27 | 110 | 3.5d | 0d | QA; TBD [50%] | 12h |
| 112 | 1.6.3.6 | Integration Test this Iterations |  | 3d | 2005-12-27 | 2005-12-30 | 111 | 3.5d | 0d | QA; Ulli | 48h |
| 113 | 1.6.3.7 | Deploy Iteration to Staging Server |  | 1d | 2005-12-30 | 2006-01-02 | 112 | 3.5d | 0d | QA | 8h |
| 114 | 1.6.3.8 | UAT Test this Iteration |  | 5d | 2006-01-02 | 2006-01-09 | 113 | 3.5d |  | CCMG; Ulli; Fei | 120h |

| ID | WBS | Task | Type | Duration | Start | Finish | Predecessors | Total slack | Free slack | Resources | Work |
| --- | --- | --- | --- | --- | --- | --- | --- | --- | --- | --- | --- |
| 115 | 1.6.4 | **Transition** |  | 3d | 2006-01-09 | 2006-01-12 |  | 3.5d | 0d |  | 44h |
| 116 | 1.6.4.1 | Code Freeze |  | 1d | 2006-01-09 | 2006-01-10 | 102 | 3.5d | 0d | TBD [50%]; Nick | 12h |
| 117 | 1.6.4.2 | Deploy Iteration to Production |  | 2d | 2006-01-10 | 2006-01-12 | 116 | 3.5d |  | QA | 16h |
| 118 | 1.6.4.3 | Create Release Notes |  | 0.5d | 2006-01-10 | 2006-01-10 | 116 | 5d |  | Srini | 4h |
| 119 | 1.6.4.4 | Create Known Issues document |  | 0.5d | 2006-01-10 | 2006-01-10 | 116 | 5d |  | Srini | 4h |
| 120 | 1.6.4.5 | Create Fixed defects document |  | 0.5d | 2006-01-10 | 2006-01-10 | 116 | 5d |  | Srini | 4h |
| 121 | 1.6.4.6 | Create What's New Document |  | 0.5d | 2006-01-10 | 2006-01-10 | 116 | 5d |  | Srini | 4h |
| 122 | 1.6.5 | Milestone: Complete Version 2.1 | milestone | 0d | 2006-01-12 | 2006-01-12 | 115 | 3.5d |  | Srini |  |
