# caMOD Release 2.4.1

Schedule from MS Project, 2008-05-01 to 2008-05-26.
Sony Electronics, Inc.

## Calendars

- Standard: Mon-Fri 08:00-12:00, 13:00-17:00; Sat-Sun off.

## Resources

| Resource |
| --- |
| Sima |
| Kavitha |
| Ulli |
| Systems |
| NIH Security |

## Schedule

| ID | WBS | Task | Duration | Start | Finish | Predecessors | Total slack | Constraint | Resources | Work |
| --- | --- | --- | --- | --- | --- | --- | --- | --- | --- | --- |
| 1 | 1 | **caMOD 2.4.1** | 18d? | 2008-05-01 | 2008-05-26 |  | 0d |  |  | 208h |
| 2 | 1.1 | Implement the security patch | 5d | 2008-05-01 | 2008-05-07 |  | 0d | start no earlier than 2008-05-01 | Sima | 40h |
| 3 | 1.2 | Testing functionality | 5d | 2008-05-08 | 2008-05-14 | 2 | 0d |  | Kavitha; Ulli | 80h |
| 4 | 1.3 | Deploy to QA | 1d? | 2008-05-15 | 2008-05-15 | 3 | 0d |  | Kavitha | 8h |
| 5 | 1.4 | NCI Security Scan on QA | 1d? | 2008-05-16 | 2008-05-16 | 4 | 0d |  | Systems | 8h |
| 6 | 1.5 | Deploy to Stage | 1.5d | 2008-05-19 | 2008-05-20 | 5 | 0d |  | Systems; Sima | 24h |
| 7 | 1.6 | NIH Security Scan | 3d | 2008-05-20 | 2008-05-23 | 6 | 0d |  | NIH Security | 24h |
| 8 | 1.7 | Deploy to Production | 1.5d | 2008-05-23 | 2008-05-26 | 7 | 0d |  | Systems; Sima | 24h |
