# caMOD 2.2

Schedule from MS Project, 2008-04-14 to 2008-12-10, A marks actual dates.
SAIC

## Calendars

- Standard: Mon-Fri 08:00-12:00, 13:00-17:00; Sat-Sun off.

## Resources

| Resource |
| --- |
| NCICB |
| Anand |
| Ulli |
| QA |
| Sima |
| DBA |
| 2nd Resource |
| Sima |
| Grid Resource |
| App Support |
| Systems |
| Jill |
| Nick |

## Schedule

| ID | WBS | Task | Type | Duration | Start | Finish | Predecessors | Complete | Remaining | Total slack | Free slack | Constraint | Resources | Work | Actual work |
| --- | --- | --- | --- | --- | --- | --- | --- | --- | --- | --- | --- | --- | --- | --- | --- |
| 1 | 1 | **caMOD 2.5 Release** |  | 173d | 2008-04-14 A | 2008-12-10 |  | 15% | 147.82d | 0d |  |  |  | 2384h | 312h |
| 2 | 1.1 | **Inception Phase** |  | 88d | 2008-04-14 | 2008-08-13 |  |  |  | 18d | 0d |  |  | 192h |  |
| 3 | 1.1.1 | Use Case and Design Doc (caBIG template) |  | 2w | 2008-04-14 | 2008-04-25 |  |  |  | 18d | 0d | start no earlier than 2008-04-14 | Nick | 80h |  |
| 4 | 1.1.2 | Review use cases / design with the "Review Board" |  | 1d | 2008-04-28 | 2008-04-28 | 3 |  |  | 18d | 0d |  | Nick | 8h |  |
| 5 | 1.1.3 | Write a design document for gridified caMOD |  | 10d | 2008-07-28 | 2008-08-08 | 45 |  |  | 37d | 0d | start no earlier than 2008-07-28 | Sima | 80h |  |
| 6 | 1.1.4 | Submit the gridified design document to ARB |  | 3d | 2008-08-11 | 2008-08-13 | 5 |  |  | 37d | 0d | finish no earlier than 2008-06-30 | Sima | 24h |  |
| 7 | 1.2 | Milestone: Completed Design Document | milestone | 0d | 2008-08-13 | 2008-08-13 | 4, 5, 6 |  |  | 66d | 59d |  | Anand |  |  |
| 8 | 1.3 | **Elaboration Phase** |  | 29d | 2008-08-14 | 2008-09-23 | 2 |  |  | 47d |  |  |  | 232h |  |
| 9 | 1.3.1 | Create valute domains for caDSR |  | 10d | 2008-08-14 | 2008-08-27 |  |  |  | 47d | 0d | start no earlier than 2008-02-04 | Ulli | 80h |  |
| 10 | 1.3.2 | Incorporate changes to the Object Model |  | 2d | 2008-08-28 | 2008-08-29 | 9 |  |  | 47d | 0d |  | Ulli | 16h |  |
| 11 | 1.3.3 | Make code changes due to Object Model changes |  | 5d | 2008-09-01 | 2008-09-05 | 10 |  |  | 47d | 0d |  | Nick | 40h |  |
| 12 | 1.3.4 | Milestone: Soft Freeze Object Model | milestone | 0d | 2008-09-05 | 2008-09-05 | 11 |  |  | 47d | 0d |  | Nick |  |  |
| 13 | 1.3.5 | Round Trip, Import XMI into EA |  | 2d | 2008-09-08 | 2008-09-09 | 12 |  |  | 47d | 0d |  | Ulli | 16h |  |
| 14 | 1.3.6 | Register Model in caDSR |  | 10d | 2008-09-10 | 2008-09-23 | 13 |  |  | 47d | 0d |  | Ulli | 80h |  |
| 15 | 1.4 | Milestone: Model Registered in CADSR | milestone | 0d | 2008-09-23 | 2008-09-23 | 14 |  |  | 47d |  | start no earlier than 2008-02-04 |  |  |  |
| 16 | 1.5 | **iteration 1:** |  | 142d | 2008-04-29 A | 2008-11-12 | 4 | 23% | 109.99d | 0d |  |  |  | 1544h | 312h |
| 17 | 1.5.1 | **Infrastructure Upgrade** |  | 18d | 2008-04-29 | 2008-05-22 |  |  |  | 101d |  |  |  | 144h |  |
| 18 | 1.5.1.1 | 7115 - Automate nightly build using CruiseControl |  | 5d | 2008-04-29 | 2008-05-05 |  |  |  | 101d | 0d | start no earlier than 2008-02-25 | Nick | 40h |  |
| 19 | 1.5.1.2 | 10958 - Take existing test scripts and run them in Selenium |  | 5d | 2008-05-06 | 2008-05-12 | 18 |  |  | 101d | 0d |  | Nick | 40h |  |
| 20 | 1.5.1.3 | 11500 - Create a build.sh script for the new instance for BOTH camod.war |  | 3d | 2008-05-13 | 2008-05-15 | 19 |  |  | 101d | 0d |  | Nick | 24h |  |
| 21 | 1.5.1.4 | 12481 - Create automated deployment for caMOD to each tier |  | 5d | 2008-05-16 | 2008-05-22 | 20 |  |  | 101d |  |  | Nick | 40h |  |
| 22 | 1.5.2 | **Enhancements and Misc bugs** |  | 54d | 2008-05-23 A | 2008-08-06 |  | 69% | 17d | 29d | 0d |  |  | 432h | 296h |
| 23 | 1.5.2.1 | 12216 - Release date selection not maintaining value |  | 1d | 2008-05-23 A | 2008-05-23 A | 17 | 100% |  |  |  |  | Nick | 8h | 8h |
| 24 | 1.5.2.2 | 7028 - Add link to pdf users guide to Quick Links menu |  | 1d | 2008-05-26 A | 2008-05-26 A | 23 | 100% |  |  |  |  | Nick | 8h | 8h |
| 25 | 1.5.2.3 | 5205 - cannot delete/enter radiation for old model - page does not |  | 2d | 2008-05-27 | 2008-05-28 | 24 |  |  | 79d |  |  | Nick | 16h |  |
| 26 | 1.5.2.4 | 11013 - Use improved PubMed fetch script on publication submission page |  | 5d | 2008-05-29 A | 2008-06-04 A | 25 | 100% |  |  |  |  | Nick | 40h | 40h |
| 27 | 1.5.2.5 | 12064 - Title field on publication submission field has size limit OR PubMed fetch script does not retrieve complete publication title |  | 1d | 2008-06-05 A | 2008-06-05 A | 26 | 100% |  |  |  |  | Nick | 8h | 8h |
| 28 | 1.5.2.6 | 5173 - Publication issues - various bugs |  | 2d | 2008-06-06 A | 2008-06-09 A | 27 | 100% |  |  |  |  | Nick | 16h | 16h |
| 29 | 1.5.2.7 | 7474 - Give fields in "Customize Search" feature meaningful names |  | 2d | 2008-06-10 A | 2008-06-11 | 28 | 50% | 1d | 69d |  |  | Nick | 16h | 8h |
| 30 | 1.5.2.8 | 12042 - Save query function broken - Fix |  | 5d | 2008-06-12 A | 2008-06-18 A | 29 | 100% |  |  |  |  | Nick | 40h | 40h |
| 31 | 1.5.2.9 | 7636 - Query not saved when search returns no models. |  | 3d | 2008-06-19 A | 2008-06-23 A | 30 | 100% |  |  |  |  | Nick | 24h | 24h |
| 32 | 1.5.2.10 | 5204 - left side search menu disappears when user customizes search |  | 1d | 2008-06-24 A | 2008-06-24 A | 31 | 100% |  |  |  |  | Nick | 8h | 8h |
| 33 | 1.5.2.11 | 7850 - Place a URL field on the image page |  | 3d | 2008-06-25 A | 2008-06-27 | 32 | 50% | 1.5d | 53d | 0d |  | Nick | 24h | 12h |
| 34 | 1.5.2.12 | 5097 - submitting microarray data that are stored in other applications than caArray |  | 3d | 2008-06-30 A | 2008-07-02 | 33 | 50% | 1.5d | 51.5d | 0d | start no earlier than 2008-03-10 | Nick | 24h | 12h |
| 35 | 1.5.2.13 | 8400 - Duplication does not work for some fields |  | 5d | 2008-07-03 A | 2008-07-09 | 34 | 50% | 2.5d | 49d |  |  | Nick | 40h | 20h |
| 36 | 1.5.2.14 | 5200 - Duplicate Model - status of duplicated model should be default be incomplete |  | 3d | 2008-07-10 A | 2008-07-14 A | 35 | 100% |  |  |  |  | Nick | 24h | 24h |
| 37 | 1.5.2.15 | 5249 - Fix searches - allow oracle result set > 1000 |  | 10d | 2008-07-15 A | 2008-07-28 | 36 | 50% | 5d | 32.5d | 0d |  | Nick | 80h | 40h |
| 38 | 1.5.2.16 | 11007 - Add search for PMID to advanced search page |  | 3d | 2008-07-29 A | 2008-07-31 | 37 | 50% | 1.5d | 31d | 0d |  | Nick | 24h | 12h |
| 39 | 1.5.2.17 | 9127 - Customize publication pages for rat to allow submissio & display of RGD references |  | 4d | 2008-08-01 A | 2008-08-06 | 38 | 50% | 2d | 29d |  |  | Nick | 32h | 16h |

| ID | WBS | Task | Duration | Start | Finish | Predecessors | Complete | Remaining | Total slack | Free slack | Constraint | Resources | Work | Actual work |
| --- | --- | --- | --- | --- | --- | --- | --- | --- | --- | --- | --- | --- | --- | --- |
| 40 | 1.5.3 | **EVS Tree** | 35d | 2008-08-07 | 2008-09-24 |  |  |  | 29d |  |  |  | 280h |  |
| 41 | 1.5.3.1 | 10957 - LexBig Prototype: Investiate and demo connection to Lexbig Vocabulary System / Architecture | 20d | 2008-08-07 | 2008-09-03 | 22 |  |  | 29d | 0d |  | Nick | 160h |  |
| 42 | 1.5.3.2 | Bug Fixes | 15d | 2008-09-04 | 2008-09-24 | 41 |  |  | 29d |  |  | Nick | 120h |  |
| 43 | 1.5.4 | **Enhancements and Misc bugs** | 7d | 2008-05-05 | 2008-05-13 |  |  |  | 90d |  |  |  | 56h |  |
| 44 | 1.5.4.1 | Clean up induced mutation & environmental factor | 5d | 2008-05-05 | 2008-05-09 |  |  |  | 90d | 0d | start no earlier than 2008-05-05 | Sima | 40h |  |
| 45 | 1.5.4.2 | 5172 - Do not delete EnvironmentalFactor objects - instead reuse and leave in DB | 2d | 2008-05-12 | 2008-05-13 | 44 |  |  | 90d | 53d | start no earlier than 2008-05-05 | Sima | 16h |  |
| 46 | 1.5.5 | **Remote API / Grid** | 42d | 2008-08-14 A | 2008-10-10 |  | 5% | 40d | 18d | 0d |  |  | 336h | 16h |
| 47 | 1.5.5.1 | Make code changes due to Object Model changes | 5d | 2008-08-14 | 2008-08-20 | 6 |  |  | 37d |  | start no earlier than 2008-05-05 | Sima | 40h |  |
| 48 | 1.5.5.2 | Milestone: Soft Freeze Object Model | 2d | 2008-08-21 A | 2008-08-22 A | 47 | 100% |  |  |  |  | Sima | 16h | 16h |
| 49 | 1.5.5.3 | Leverage caCORE 3.2 for remote API | 1w | 2008-08-25 | 2008-08-29 | 48 |  |  | 18d | 0d | start no earlier than 2008-05-05 | Sima | 40h |  |
| 50 | 1.5.5.4 | Make caMod available in the grid | 5w | 2008-09-01 | 2008-10-03 | 49 |  |  | 18d | 0d |  | Sima | 200h |  |
| 51 | 1.5.5.5 | Make only edited-approved models available through API | 1w | 2008-10-06 | 2008-10-10 | 50 |  |  | 18d |  |  | Sima | 40h |  |
| 52 | 1.5.6 | **Testing** | 23d | 2008-10-13 | 2008-11-12 |  |  |  | 0d |  |  |  | 296h |  |
| 53 | 1.5.6.1 | 7142 - Test cases that need to be added to the QA test scripts | 5d | 2008-10-13 | 2008-10-17 | 46, 17, 22 |  |  | 18d |  |  | Sima; Ulli; Nick | 120h |  |
| 54 | 1.5.6.2 | Deploy iteration on DEV Server | 2d | 2008-10-28 | 2008-10-29 |  |  |  | 0d |  | start no earlier than 2008-10-28 | Sima | 16h |  |
| 55 | 1.5.6.3 | Test on DEV tier | 2w | 2008-10-30 | 2008-11-12 | 54 |  |  | 0d |  |  | Ulli; Sima | 160h |  |
| 56 | 1.6 | **Transition Phase** | 20d | 2008-11-13 | 2008-12-10 | 16 |  |  | 0d |  |  |  | 416h |  |
| 57 | 1.6.1 | **QA** | 10d | 2008-11-13 | 2008-11-26 | 7 |  |  | 10d |  |  | QA | 160h |  |
| 58 | 1.6.1.1 | Finalize Testplan | 1w | 2008-11-13 | 2008-11-19 | 7 |  |  | 10d | 0d |  | QA | 40h |  |
| 59 | 1.6.1.2 | Finalize Test Cases | 1w | 2008-11-20 | 2008-11-26 | 58 |  |  | 10d |  |  | QA | 40h |  |
| 60 | 1.6.2 | **Deploy** | 20d | 2008-11-13 | 2008-12-10 |  |  |  | 0d |  |  |  | 176h |  |
| 61 | 1.6.2.1 | **QA Server Deployment** | 12d | 2008-11-13 | 2008-11-28 | 55 |  |  | 0d |  |  |  | 80h |  |
| 62 | 1.6.2.1.1 | QA Testing | 2w | 2008-11-13 | 2008-11-26 |  |  |  | 0d |  |  | QA | 80h |  |
| 63 | 1.6.2.1.2 | Security Scan on QA | 2d | 2008-11-27 | 2008-11-28 | 62 |  |  | 8d |  |  |  |  |  |

| ID | WBS | Task | Type | Duration | Start | Finish | Predecessors | Total slack | Free slack | Resources | Work |
| --- | --- | --- | --- | --- | --- | --- | --- | --- | --- | --- | --- |
| 64 | 1.6.2.2 | **Staging Server Deployment** |  | 8d | 2008-11-27 | 2008-12-08 | 62 | 0d |  |  | 64h |
| 65 | 1.6.2.2.1 | Staging Testing |  | 8d | 2008-11-27 | 2008-12-08 |  | 0d |  | Ulli | 64h |
| 66 | 1.6.2.3 | **Production Server Deployment** |  | 2d | 2008-12-09 | 2008-12-10 | 65 | 0d |  | Sima | 32h |
| 67 | 1.6.2.3.1 | Production Verification |  | 2d | 2008-12-09 | 2008-12-10 |  | 0d |  | Ulli | 16h |
| 68 | 1.6.3 | **Documentation** |  | 10d | 2008-11-13 | 2008-11-26 | 46 | 10d |  |  | 80h |
| 69 | 1.6.3.1 | Document How to Connect to caMOD |  | 1w | 2008-11-13 | 2008-11-19 |  | 10d | 0d | Sima | 40h |
| 70 | 1.6.3.2 | Documentation Edit by Documentation Team |  | 5d | 2008-11-20 | 2008-11-26 | 69 | 10d |  | Jill | 40h |
| 71 | 1.6.4 | caMOD 2.5 - Closeout | milestone | 0d | 2008-12-10 | 2008-12-10 | 67 | 0d |  |  |  |
