# camod Release 2.6.1-2

Schedule from MS Project, 2010-01-25 to 2010-06-02.
NCI

## Calendars

- Standard: Mon-Fri 08:00-12:00, 13:00-17:00; Sat-Sun off. Exceptions (off unless hours are given): 2010-02-15 (President's Day), 2010-05-31 (Memorial Day).

## Resources

| Resource |
| --- |
| Sima |
| Ulli |
| Juli |
| Maki |
| Kavitha |
| QA |
| Jill |
| Security Team |
| Systems |
| Lalitha |

## Schedule

| ID | WBS | Task | Type | Duration | Start | Finish | Predecessors | Total slack | Free slack | Constraint | Resources | Work |
| --- | --- | --- | --- | --- | --- | --- | --- | --- | --- | --- | --- | --- |
| 1 | 1 | **caMOD 2.6.1Release** |  | 90.5d | 2010-01-25 | 2010-06-02 |  | 0d |  |  |  | 1012h |
| 2 | 1.1 | **Inception Phase** |  | 6d | 2010-01-25 | 2010-02-01 |  | 0d |  |  |  | 104h |
| 3 | 1.1.1 | Scope 2.6.0 Release |  | 3d | 2010-01-25 | 2010-01-27 |  | 0d |  | start no earlier than 2010-01-25 | Sima; Ulli | 48h |
| 4 | 1.1.2 | Schedule 2.6.0 Release |  | 3d | 2010-01-28 | 2010-02-01 | 3 | 0d |  |  | Sima; Maki; Ulli | 56h |
| 5 | 1.1.3 | Milestone: Inception Completed | milestone | 0d | 2010-02-01 | 2010-02-01 | 4 | 0d |  |  |  |  |
| 6 | 1.2 | **Elaboration Phase** |  | 6d | 2010-02-02 | 2010-02-09 | 5 | 0d |  |  |  | 64h |
| 7 | 1.2.1 | Use Case and Design Doc (caBIG template) |  | 5d | 2010-02-02 | 2010-02-08 |  | 0d |  |  | Sima | 40h |
| 8 | 1.2.2 | Review use cases / design with the "Review Board" |  | 1d | 2010-02-09 | 2010-02-09 | 7 | 11d | 0d | finish no earlier than 2009-01-27 | Juli; Maki; Ulli | 24h |
| 9 | 1.2.3 | Milestone: Elaboration Completed | milestone | 0d | 2010-02-09 | 2010-02-09 | 7, 8 | 11d | 0d |  |  |  |
| 10 | 1.3 | **Construction Phase** |  | 57d | 2010-02-10 | 2010-04-30 | 6 | 0d |  |  |  | 400h |
| 11 | 1.3.1 | caMOD changes in support for caImage upgrade |  | 10d | 2010-02-26 | 2010-03-11 |  | 0d |  |  | Sima | 80h |
| 12 | 1.3.2 | 25294: BDA - automate changes to external properties |  | 5d | 2010-03-12 | 2010-03-18 | 11 | 0d |  |  | Sima | 40h |
| 13 | 1.3.3 | 26348: Reassign caMOD curator models to caMODcurator2 account |  | 1d | 2010-03-19 | 2010-03-19 | 12 | 0d |  |  | Sima | 8h |
| 14 | 1.3.4 | 26349: Add caMOD curator2 account to superuser list |  | 1d | 2010-03-22 | 2010-03-22 | 13 | 0d |  |  | Sima | 8h |
| 15 | 1.3.5 | Milestone: Complete Development | milestone | 0d | 2010-03-22 | 2010-03-22 | 14 | 0d |  |  |  |  |
| 16 | 1.3.6 | **Testing** |  | 57d | 2010-02-10 | 2010-04-30 | 9 | 0d |  |  |  | 264h |
| 17 | 1.3.6.1 | Update test cases |  | 11d | 2010-02-10 | 2010-03-01 |  | 15d |  |  | Sima; Ulli | 88h |
| 18 | 1.3.6.2 | Deploy iteration on DEV Server |  | 2d | 2010-03-23 | 2010-03-24 | 17, 15 | 0d |  |  | Sima | 16h |
| 19 | 1.3.6.3 | Test on DEV tier |  | 17d | 2010-03-25 | 2010-04-30 | 18 | 0d |  |  | Sima; Ulli | 160h |
| 20 | 1.3.7 | Milestone: Construction Completed | milestone | 0d | 2010-04-30 | 2010-04-30 | 16 | 0d |  |  |  |  |
| 21 | 1.4 | **Transition Phase** |  | 50.5d | 2010-03-23 | 2010-06-02 | 9 | 0d |  |  |  | 444h |
| 22 | 1.4.1 | **QA** |  | 13d | 2010-03-23 | 2010-04-08 | 9 | 32.5d | 0d |  |  | 104h |
| 23 | 1.4.1.1 | Finalize Testplan |  | 10d | 2010-03-23 | 2010-04-05 | 15 | 32.5d | 0d | start no earlier than 2009-09-01 | QA | 80h |
| 24 | 1.4.1.2 | Finalize Test Cases |  | 3d | 2010-04-06 | 2010-04-08 | 23 | 32.5d |  |  | QA | 24h |

| ID | WBS | Task | Type | Duration | Start | Finish | Predecessors | Total slack | Resources | Work |
| --- | --- | --- | --- | --- | --- | --- | --- | --- | --- | --- |
| 25 | 1.4.2 | **Deploy** |  | 21.5d | 2010-05-03 | 2010-06-02 | 20 | 0d |  | 228h |
| 26 | 1.4.2.1 | **QA Server Deployment** |  | 5.5d | 2010-05-03 | 2010-05-10 | 20 | 0d |  | 44h |
| 27 | 1.4.2.1.1 | QA Deployment |  | 0.5d | 2010-05-03 | 2010-05-03 |  | 0d | Sima | 4h |
| 28 | 1.4.2.1.2 | QA Testing |  | 5d | 2010-05-03 | 2010-05-10 | 27 | 0d | QA | 40h |
| 29 | 1.4.2.1.3 | Milestone: QA Testing Completed | milestone | 0d | 2010-05-10 | 2010-05-10 | 28 | 0d |  |  |
| 30 | 1.4.2.2 | **Staging Server Deployment** |  | 12d | 2010-05-10 | 2010-05-26 | 29 | 0d |  | 136h |
| 31 | 1.4.2.2.1 | Stage Deployment |  | 2d | 2010-05-10 | 2010-05-12 |  | 0d | Sima | 16h |
| 32 | 1.4.2.2.2 | Stage Testing |  | 5d | 2010-05-12 | 2010-05-19 | 31 | 5d | QA | 40h |
| 33 | 1.4.2.2.3 | App scan on Stage |  | 10d | 2010-05-12 | 2010-05-26 | 31 | 0d | Security Team | 80h |
| 34 | 1.4.2.2.4 | Milestone: Stage Testing Completed | milestone | 0d | 2010-05-26 | 2010-05-26 | 33, 32 | 0d |  |  |
| 35 | 1.4.2.3 | **Production Server Deployment** |  | 4d | 2010-05-26 | 2010-06-02 | 34 | 0d |  | 48h |
| 36 | 1.4.2.3.1 | Production server deployment |  | 2d | 2010-05-26 | 2010-05-28 | 34 | 0d | Systems | 16h |
| 37 | 1.4.2.3.2 | Production Verification |  | 2d | 2010-05-28 | 2010-06-02 | 36 | 0d | Sima; Ulli | 32h |
| 38 | 1.4.3 | **Documentation** |  | 5d | 2010-04-09 | 2010-04-15 |  | 32.5d |  | 40h |
| 39 | 1.4.3.1 | Documentation Edit by Documentation Team |  | 5d | 2010-04-09 | 2010-04-15 | 22 | 32.5d | Jill | 40h |
| 40 | 1.4.4 | **Content Page Update** |  | 3d | 2010-05-26 | 2010-06-01 |  | 1d |  | 72h |
| 41 | 1.4.4.1 | zope site update |  | 3d | 2010-05-26 | 2010-06-01 | 30 | 1d | Maki; Ulli | 48h |
| 42 | 1.4.4.2 | gForge download site update |  | 3d | 2010-05-26 | 2010-06-01 | 30 | 1d | Sima | 24h |
| 43 | 2 | caMOD 2.6.0 - Closeout | milestone | 0d | 2010-06-02 | 2010-06-02 | 21 | 0d |  |  |
