# camod Release 2.8.0

Schedule from MS Project, 2010-07-16 to 2011-06-27.
NCI

## Calendars

- Standard: Mon-Fri 08:00-12:00, 13:00-17:00; Sat-Sun off. Exceptions (off unless hours are given): 2010-09-06 (Labor Day), 2010-09-13 to 2010-09-15 (caBig Annual Meeting), 2010-10-11 (Columbus Day), 2010-11-11 (Veterans Day), 2010-11-25 (Thanksgiving Day), 2010-12-24 (Christmas Eve), 2010-12-31 (New Year's Eve).

## Resources

| Resource |
| --- |
| Sima |
| Ulli |
| Juli |
| Maki |
| Kavitha |
| QA |
| Jill |
| Security Team |
| Systems |
| Lalitha |

## Schedule

| ID | WBS | Task | Type | Duration | Start | Finish | Predecessors | Total slack | Free slack | Constraint | Resources | Work |
| --- | --- | --- | --- | --- | --- | --- | --- | --- | --- | --- | --- | --- |
| 1 | 1 | **caMOD 2.8.0 Release** |  | 238d | 2010-07-16 | 2011-06-27 |  | 0d |  |  |  | 1632h |
| 2 | 1.1 | **Inception Phase** |  | 6d | 2010-07-16 | 2010-07-23 |  | 0d |  |  |  | 104h |
| 3 | 1.1.1 | Scope 2.8.0 Release |  | 3d | 2010-07-16 | 2010-07-20 |  | 0d |  | start no earlier than 2010-07-16 | Sima; Ulli | 48h |
| 4 | 1.1.2 | Schedule 2.8.0 Release |  | 3d | 2010-07-21 | 2010-07-23 | 3 | 0d |  |  | Sima; Maki; Ulli | 56h |
| 5 | 1.1.3 | Milestone: Inception Completed | milestone | 0d | 2010-07-23 | 2010-07-23 | 4 | 0d |  |  |  |  |
| 6 | 1.2 | **Elaboration Phase** |  | 11d | 2010-07-26 | 2010-08-09 | 5 | 2.5d | 0d |  |  | 104h |
| 7 | 1.2.1 | Use Case and Design Doc (caBIG template) |  | 10d | 2010-07-26 | 2010-08-06 |  | 2.5d | 0d |  | Sima | 80h |
| 8 | 1.2.2 | Review use cases / design with the "Review Board" |  | 1d | 2010-08-09 | 2010-08-09 | 7 | 2.5d | 0d | finish no earlier than 2009-01-27 | Juli; Maki; Ulli | 24h |
| 9 | 1.2.3 | Milestone: Elaboration Completed | milestone | 0d | 2010-08-09 | 2010-08-09 | 7, 8 | 2.5d |  |  |  |  |
| 10 | 1.3 | **Construction Phase** |  | 179d | 2010-08-10 | 2011-04-28 | 6 | 0d |  |  |  | 900h |
| 11 | 1.3.1 | 18438 - Change label from MMHCC Repository to NCI Mouse Repository |  | 0.5d | 2010-08-10 | 2010-08-10 |  | 2.5d | 0d |  | Sima | 4h |
| 12 | 1.3.2 | 23750 - links to sid images needs to be changes |  | 10d | 2010-08-10 | 2010-08-24 | 11 | 2.5d | 0d |  | Sima | 80h |
| 13 | 1.3.3 | 20593 - Entered date changes every single time the model characteristics page is changed |  | 2d | 2010-08-24 | 2010-08-26 | 12 | 2.5d | 0d |  | Sima | 16h |
| 14 | 1.3.4 | 17041 - Add search for model id to simple and advanced search page |  | 1d | 2010-08-26 | 2010-08-27 | 13 | 2.5d | 0d |  | Sima | 8h |
| 15 | 1.3.5 | 19879 - Display PMID number on search page |  | 0.5d | 2010-08-27 | 2010-08-27 | 14 | 2.5d | 0d |  | Sima | 4h |
| 16 | 1.3.6 | 21701 - html tag syntax appears in Adv Srch / Compound/Drug dropdown menu |  | 0.5d | 2010-08-30 | 2010-08-30 | 15 | 2.5d | 0d |  | Sima | 4h |
| 17 | 1.3.7 | 23452 - Wrap First Author field for MTB pages |  | 1d | 2010-08-30 | 2010-08-31 | 16 | 2.5d | 0d |  | Sima | 8h |
| 18 | 1.3.8 | 18684 - Add email address to the Admin - User Management - Add User page |  | 2d | 2010-08-31 | 2010-09-02 | 17 | 2.5d | 0d |  | Sima | 16h |
| 19 | 1.3.9 | 14560 - Separation between keyword seach and simple/advanced search is not obvious to user |  | 1d | 2010-09-02 | 2010-09-03 | 18 | 2.5d | 0d |  | Sima | 8h |
| 20 | 1.3.10 | 12089 - improve labeling and sorting of promoter, poly A and intro entries on search page |  | 2d | 2010-09-03 | 2010-09-08 | 19 | 2.5d | 0d |  | Sima | 16h |
| 21 | 1.3.11 | 4769 - Provide additional data from MGI - Parsing MGI data (Proof of Concept) |  | 10d | 2010-09-08 | 2010-09-27 | 20 | 2.5d | 0d |  | Sima | 80h |
| 22 | 1.3.12 | 10047 - Allow users to manually enter rat diagnoses |  | 3d | 2010-09-27 | 2010-09-30 | 21 | 2.5d | 0d |  |  |  |
| 23 | 1.3.13 | 21809 - Add Tmor Site back into the default if LexEVS returns properties quicker |  | 1d | 2010-09-30 | 2010-10-01 | 22 | 2.5d | 0d |  |  |  |
| 24 | 1.3.14 | 6387 - EVS - user mouse and rat strains from NCI Thesaurus |  | 3d | 2010-10-01 | 2010-10-06 | 23 | 2.5d |  |  |  |  |
| 25 | 1.3.15 | 19876 - Therapy search results page is getting too long |  | 3d | 2010-10-12 | 2010-10-14 | 24 | 0d |  |  | Sima | 24h |
| 26 | 1.3.16 | 18439 - Validation script for external links needed |  | 1d | 2010-10-15 | 2010-10-15 | 25 | 0d |  |  | Sima | 8h |
| 27 | 1.3.17 | 18058 - Rename submitMicroarrayData.jsp to match all other formats |  | 1d | 2010-10-18 | 2010-10-18 | 26 | 0d |  |  | Sima | 8h |
| 28 | 1.3.18 | 24472 - bring search for induced mutation back |  | 3d | 2010-10-19 | 2010-10-21 | 27 | 0d |  |  | Sima | 24h |
| 29 | 1.3.19 | 14352 - Add search for models with cell lines to the TOC |  | 2d | 2010-10-22 | 2010-10-25 | 28 | 0d |  |  | Sima | 16h |
| 30 | 1.3.20 | 6848 - Letting a user add and view staining methods that are not part of the vocabulary; affects old and new entries |  | 4d | 2010-10-26 | 2010-10-29 | 29 | 0d |  |  | Sima | 32h |
| 31 | 1.3.21 | 23691 - Setting model to &quot;inactive&quot; does not work - fix inactive |  | 4d | 2010-11-01 | 2010-11-04 | 30 | 0d |  |  | Sima | 32h |
| 32 | 1.3.22 | 21113 - Customized search for Transplantation Donor Species not working for records with strain_id |  | 3d | 2010-11-05 | 2010-11-09 | 31 | 0d |  |  | Sima | 24h |
| 33 | 1.3.23 | 17907 - Error editing cell line page for species without controlled anatomy vocabs |  | 3d | 2010-11-10 | 2010-11-15 | 32 | 0d |  |  | Sima | 24h |
| 34 | 1.3.24 | 9126 - value of organ field not shown on histopathology submission page - validation issue |  | 1d | 2010-11-16 | 2010-11-16 | 33 | 0d |  |  | Sima | 8h |
| 35 | 1.3.25 | 9125 - blank histopathology submission for species without vocabularies possible - write new validation code |  | 3d | 2010-11-17 | 2010-11-19 | 34 | 0d |  |  | Sima | 24h |
| 36 | 1.3.26 | 23691 - Setting model to "inactive" does not work - fix inactive |  | 5d | 2010-11-29 | 2010-12-03 | 35 | 0d |  |  | Sima | 40h |
| 37 | 1.3.27 | 6745 - Synchronize the submitOverview code to send parameters within the link like the admin section does |  | 3d | 2010-12-06 | 2010-12-08 | 36 | 0d |  |  | Sima | 24h |
| 38 | 1.3.28 | 14379 - Synchronize the submitOverview code to send parameters within the link like the admin section does |  | 4d | 2010-12-09 | 2010-12-14 | 37 | 0d |  |  | Sima | 32h |
| 39 | 1.3.29 | 24843 - Add drug vocabulary to therapy page |  | 3d | 2010-12-15 | 2010-12-17 | 38 | 0d |  |  | Sima | 24h |
| 40 | 1.3.30 | 24844 - Add mouse strain vocabulary to model characteristics page |  | 3d | 2010-12-20 | 2010-12-22 | 39 | 0d |  |  | Sima | 24h |
| 41 | 1.3.31 | 24845 - Add rat strain vocabulary to model characteristics page |  | 3d | 2010-12-23 | 2010-12-28 | 40 | 0d |  |  | Sima | 24h |
| 42 | 1.3.32 | 7773 - Allow users to add staining methods |  | 3d | 2010-12-29 | 2011-01-03 | 41 | 0d |  |  |  |  |
| 43 | 1.3.33 | 19109 - Closing a statement (and result set) you left open - QueryManagerImple.getAllPublications |  | 1d | 2011-01-04 | 2011-01-04 | 42 | 0d |  |  |  |  |
| 44 | 1.3.34 | 24757 - customized search does not show targeted modification type column |  | 1d | 2011-01-05 | 2011-01-05 | 43 | 0d |  |  |  |  |
| 45 | 1.3.35 | 6745 - Synchronize the submitOverview code to send parameters within the link like the admin section does |  | 3d | 2011-01-06 | 2011-01-10 | 44 | 0d |  |  |  |  |
| 46 | 1.3.36 | 25081 - Displaying information about related models based on PMID number |  | 5d | 2011-01-11 | 2011-01-17 | 45 | 0d |  |  |  |  |
| 47 | 1.3.37 | 25083 - Displaying information about related models based on EntezGeneID |  | 4d | 2011-01-18 | 2011-01-21 | 46 | 0d |  |  |  |  |
| 48 | 1.3.38 | 24934 - SuperUser should be allowed to duplicate a model from the administration section |  | 2d | 2011-01-24 | 2011-01-25 | 47 | 0d |  |  |  |  |
| 49 | 1.3.39 | 19974 - Duplicate models feature creates new entries in look up table transient interference method |  | 1d | 2011-01-26 | 2011-01-26 | 48 | 0d |  |  |  |  |
| 50 | 1.3.40 | 20594 - Duplication does not work when record has histolopathology data |  | 1d | 2011-01-27 | 2011-01-27 | 49 | 0d |  |  |  |  |
| 51 | 1.3.41 | 24931 - Upgrade Duplicate method to use JavaBeanUtils |  | 10d | 2011-01-28 | 2011-02-10 | 50 | 0d |  |  |  |  |
| 52 | 1.3.42 | 5007 - Unable to duplicate record (id 10001939) |  | 1d | 2011-02-11 | 2011-02-11 | 51 | 0d |  |  |  |  |
| 53 | 1.3.43 | 5200 - Duplicate Model - status of duplicated model should be default be "complete" |  | 1d | 2011-02-14 | 2011-02-14 | 52 | 0d |  |  |  |  |
| 54 | 1.3.44 | 5222 - Duplicate Model - Can not dupliate models with TransientInterferenceMethod data |  | 1d | 2011-02-15 | 2011-02-15 | 53 | 0d |  |  |  |  |
| 55 | 1.3.45 | 8400 - Duplication does not work for some fields - re-engineer entire duplicate method with newer technology |  | 1d | 2011-02-16 | 2011-02-16 | 54 | 0d |  |  |  |  |
| 56 | 1.3.46 | 27524 - Java upgrade (in order to make the Java BeanUtil work) |  | 5d | 2011-02-17 | 2011-02-23 | 55 | 0d |  |  |  |  |
| 57 | 1.3.47 | 17956 - Rewrite and data clean up for induced mutation data |  | 5d | 2011-02-24 | 2011-03-02 | 56 | 0d |  |  |  |  |
| 58 | 1.3.48 | 18058 - Rename submitMicroarrayData.jsp to match all other formats |  | 2d | 2011-03-03 | 2011-03-04 | 57 | 0d |  |  |  |  |
| 59 | 1.3.49 | 21694 - DB clean up strain entries with 'Not Specified' |  | 2d | 2011-03-07 | 2011-03-08 | 58 | 0d |  |  |  |  |
| 60 | 1.3.50 | 18829 - Add zebrafish strains to strain table |  | 2d | 2011-03-09 | 2011-03-10 | 59 | 0d |  |  |  |  |
| 61 | 1.3.51 | 11501 - Add mouse subspecies to caMOD |  | 2d | 2011-03-11 | 2011-03-14 | 60 | 0d |  |  |  |  |
| 62 | 1.3.52 | 27617 - Add rabbit strain vocabulary to model characteristics page |  | 3d | 2011-03-15 | 2011-03-17 | 61 | 0d |  |  |  |  |
| 63 | 1.3.53 | 27621 - Add zebrafish strain vocabulary to model characteristics page |  | 3d | 2011-03-18 | 2011-03-22 | 62 | 0d |  |  |  |  |
| 64 | 1.3.54 | 27624 - Add pig strain vocabulary to model characteristics page |  | 3d | 2011-03-23 | 2011-03-25 | 63 | 0d |  |  |  |  |
| 65 | 1.3.55 | 27626 - Add guinea pig strain vocabulary to model characteristics page |  | 3d | 2011-03-28 | 2011-03-30 | 64 | 0d |  |  |  |  |

| ID | WBS | Task | Type | Duration | Start | Finish | Predecessors | Total slack | Free slack | Constraint | Resources | Work |
| --- | --- | --- | --- | --- | --- | --- | --- | --- | --- | --- | --- | --- |
| 66 | 1.3.56 | **Testing** |  | 21d | 2011-03-31 | 2011-04-28 | 65, 64 | 0d |  |  |  | 264h |
| 67 | 1.3.56.1 | Update test cases |  | 9d | 2011-03-31 | 2011-04-12 |  | 0d |  |  | Sima; Ulli | 88h |
| 68 | 1.3.56.2 | Deploy iteration on DEV Server |  | 2d | 2011-04-13 | 2011-04-14 | 67 | 0d |  |  | Sima | 16h |
| 69 | 1.3.56.3 | Test on DEV tier |  | 10d | 2011-04-15 | 2011-04-28 | 68 | 0d |  |  | Sima; Ulli | 160h |
| 70 | 1.3.57 | Milestone: Construction Completed | milestone | 0d | 2011-04-28 | 2011-04-28 | 66 | 0d |  |  |  |  |
| 71 | 1.4 | **Transition Phase** |  | 42d | 2011-04-29 | 2011-06-27 | 10 | 0d |  |  |  | 524h |
| 72 | 1.4.1 | **QA** |  | 13d | 2011-04-29 | 2011-05-17 |  | 0d |  |  |  | 104h |
| 73 | 1.4.1.1 | Finalize Testplan |  | 10d | 2011-04-29 | 2011-05-12 |  | 0d |  | start no earlier than 2009-09-01 | QA | 80h |
| 74 | 1.4.1.2 | Finalize Test Cases |  | 3d | 2011-05-13 | 2011-05-17 | 73 | 0d |  |  | QA | 24h |
| 75 | 1.4.2 | **Deploy** |  | 42d | 2011-04-29 | 2011-06-27 |  | 0d |  |  |  | 308h |
| 76 | 1.4.2.1 | **QA Server Deployment** |  | 23d | 2011-04-29 | 2011-05-31 | 70 | 0d |  |  |  | 84h |
| 77 | 1.4.2.1.1 | QA Deploy |  | 0.5d | 2011-04-29 | 2011-04-29 |  | 12.5d |  |  | Sima | 4h |
| 78 | 1.4.2.1.2 | QA Testing |  | 10d | 2011-05-18 | 2011-05-31 | 70, 74, 77 | 0d |  |  | QA | 80h |
| 79 | 1.4.2.1.3 | Milestone: QA Testing Completed | milestone | 0d | 2011-05-31 | 2011-05-31 | 78 | 0d |  |  |  |  |
| 80 | 1.4.2.2 | **Staging Server Deployment** |  | 15d | 2011-06-01 | 2011-06-21 |  | 0d |  |  |  | 176h |
| 81 | 1.4.2.2.1 | Stage Deploy |  | 2d | 2011-06-01 | 2011-06-02 | 79 | 8d | 0d |  | Sima | 16h |
| 82 | 1.4.2.2.2 | Stage Testing |  | 5d | 2011-06-03 | 2011-06-09 | 81 | 8d |  |  | QA | 40h |
| 83 | 1.4.2.2.3 | App scan on Stage |  | 15d | 2011-06-01 | 2011-06-21 | 79 | 0d |  |  | Security Team | 120h |
| 84 | 1.4.2.2.4 | Milestone: Stage Testing Completed | milestone | 0d | 2011-06-21 | 2011-06-21 | 83, 82 | 0d |  |  |  |  |
| 85 | 1.4.2.3 | **Production Server Deployment** |  | 4d | 2011-06-22 | 2011-06-27 |  | 0d |  |  |  | 48h |
| 86 | 1.4.2.3.1 | Production server deployment |  | 2d | 2011-06-22 | 2011-06-23 | 84 | 0d |  |  | Systems | 16h |
| 87 | 1.4.2.3.2 | Production Verification |  | 2d | 2011-06-24 | 2011-06-27 | 86 | 0d |  |  | Sima; Ulli | 32h |
| 88 | 1.4.3 | **Documentation** |  | 5d | 2011-05-18 | 2011-05-24 |  | 24d |  |  |  | 40h |
| 89 | 1.4.3.1 | Documentation Edit by Documentation Team |  | 5d | 2011-05-18 | 2011-05-24 | 72 | 24d |  |  | Jill | 40h |

| ID | WBS | Task | Type | Duration | Start | Finish | Predecessors | Total slack | Resources | Work |
| --- | --- | --- | --- | --- | --- | --- | --- | --- | --- | --- |
| 90 | 1.4.4 | **Content Page Update** |  | 3d | 2011-06-22 | 2011-06-24 |  | 1d |  | 72h |
| 91 | 1.4.4.1 | zope site update |  | 3d | 2011-06-22 | 2011-06-24 | 80 | 1d | Maki; Ulli | 48h |
| 92 | 1.4.4.2 | gForge download site update |  | 3d | 2011-06-22 | 2011-06-24 | 80 | 1d | Sima | 24h |
| 93 | 2 | caMOD 2.7.0 - Closeout | milestone | 0d | 2011-06-27 | 2011-06-27 | 71 | 0d |  |  |
