# caMOD FY005 03042005

Schedule from MS Project, 2004-12-09 to 2006-03-31, A marks actual dates.
NCI/NIH

## Calendars

- Standard: Mon-Fri 08:00-12:00, 13:00-17:00; Sat-Sun off.

## Resources

| Resource |
| --- |
| CCMG |
| Sharon |
| Johnita |
| Marguerite |
| NCICB |
| QA |
| Ulli |
| Fei |
| Alex |
| Richard |
| TBD |
| Marc P. |
| CCMG Members |
| Nick |
| Srini |
| Team |
| David |
| Marc P |
| Sima |
| Jill |

## Schedule

| ID | WBS | Task | Duration | Start | Finish | Predecessors | Complete | Remaining | Total slack | Free slack | Constraint | Resources | Work | Actual work |
| --- | --- | --- | --- | --- | --- | --- | --- | --- | --- | --- | --- | --- | --- | --- |
| 1 | 1 | **MMHCC FY005** | 341.1d | 2004-12-09 A | 2006-03-31 |  | 77% | 78.95d | 0d |  |  |  | 7046.27h | 4667.87h |
| 2 | 1.1 | **Inception** | 23d | 2004-12-09 A | 2005-01-10 |  | 99% | 0.19d | 318.1d |  |  |  | 364h | 362h |
| 3 | 1.1.1 | Identify Project Requirements | 1.5w | 2004-12-09 A | 2004-12-20 A |  | 100% |  |  |  |  | CCMG | 60h | 60h |
| 4 | 1.1.2 | Determine Level of Effort/Requirement | 2w | 2004-12-09 A | 2004-12-22 A |  | 100% |  |  |  |  | Sharon; Johnita | 160h | 160h |
| 5 | 1.1.3 | Prioritize Project Requirements | 3d | 2004-12-23 A | 2004-12-27 A | 4 | 100% |  |  |  |  | CCMG | 24h | 24h |
| 6 | 1.1.4 | Determine Project Scope | 1w | 2004-12-28 A | 2005-01-03 A | 5 | 100% |  |  |  |  | Sharon; Marguerite | 80h | 80h |
| 7 | 1.1.5 | Update Project Plan | 1w | 2005-01-04 A | 2005-01-10 | 6 | 95% | 0.05w | 283d |  |  | Sharon | 40h | 38h |
| 8 | 1.2 | **caMOD Defect Fixes** | 87d | 2005-01-05 A | 2005-05-05 |  | 95% | 4.48d | 200.7d | 0d |  |  | 408h | 368h |
| 9 | 1.2.1 | Yeast Data | 16.4w | 2005-01-05 A | 2005-04-28 A |  | 100% |  |  |  | finish no earlier than 2005-02-21 | Johnita [50%] | 328h | 328h |
| 10 | 1.2.2 | Xenograft/Alograft Data | 2w | 2005-01-05 A | 2005-04-28 A |  | 100% |  |  |  | finish no earlier than 2005-02-21 | Johnita [50%] | 40h | 40h |
| 11 | 1.2.3 | Test / Deploy yeast & xenograft fixes | 5d | 2005-04-29 | 2005-05-05 | 10 |  |  | 25.03d | 10d | start no earlier than 2005-04-25 | Johnita [50%]; Srini [25%]; Ulli [25%] | 40h |  |
| 12 | 1.3 | **CCB Meetings** | 236d | 2005-02-22 A | 2006-01-17 |  | 8% | 216.33d | 52.1d |  |  |  |  |  |
| 13 | 1.3.1 | February Meeting | 1d | 2005-02-22 A | 2005-02-22 A |  | 100% |  |  |  | start no earlier than 2005-02-22 |  |  |  |
| 14 | 1.3.2 | March Meeting | 1d | 2005-03-15 | 2005-03-15 |  |  |  | 237d |  | start no earlier than 2005-03-15 |  |  |  |
| 15 | 1.3.3 | April Meeting | 1d | 2005-04-19 | 2005-04-19 |  |  |  | 212d |  | start no earlier than 2005-04-19 |  |  |  |
| 16 | 1.3.4 | May Meeting | 1d | 2005-05-10 | 2005-05-10 |  |  |  | 197d |  | start no earlier than 2005-05-10 |  |  |  |
| 17 | 1.3.5 | June Meeting | 1d | 2005-06-21 | 2005-06-21 |  |  |  | 167d |  | start no earlier than 2005-06-21 |  |  |  |
| 18 | 1.3.6 | July Meeting | 1d | 2005-07-19 | 2005-07-19 |  |  |  | 147d |  | start no earlier than 2005-07-19 |  |  |  |
| 19 | 1.3.7 | August Meeting | 1d | 2005-08-16 | 2005-08-16 |  |  |  | 127d |  | start no earlier than 2005-08-16 |  |  |  |
| 20 | 1.3.8 | September Meeting | 1d | 2005-09-20 | 2005-09-20 |  |  |  | 102d |  | start no earlier than 2005-09-20 |  |  |  |
| 21 | 1.3.9 | October Meeting | 1d | 2005-10-18 | 2005-10-18 |  |  |  | 82d |  | start no earlier than 2005-10-18 |  |  |  |
| 22 | 1.3.10 | November Meeting | 1d | 2005-11-15 | 2005-11-15 |  |  |  | 62d |  | start no earlier than 2005-11-15 |  |  |  |
| 23 | 1.3.11 | December Meeting | 1d | 2005-12-20 | 2005-12-20 |  |  |  | 37d |  | start no earlier than 2005-12-20 |  |  |  |
| 24 | 1.3.12 | January, 2006 Meeting | 1d | 2006-01-17 | 2006-01-17 |  |  |  | 17d |  | start no earlier than 2006-01-17 |  |  |  |

| ID | WBS | Task | Type | Duration | Start | Finish | Predecessors | Complete | Remaining | Total slack | Constraint | Resources | Work | Actual work |
| --- | --- | --- | --- | --- | --- | --- | --- | --- | --- | --- | --- | --- | --- | --- |
| 25 | 1.4 | **caMOD Enhancements (2-Tier)** |  | 16d | 2005-05-05 A | 2005-05-26 A |  | 100% |  |  |  |  | 102.4h | 102.4h |
| 26 | 1.4.1 | Fix urgent / high priority defects in Test Track |  | 1w | 2005-05-05 A | 2005-05-11 A |  | 100% |  |  | start no earlier than 2005-05-05 | Nick | 38.4h | 38.4h |
| 27 | 1.4.2 | Test all changes implemented in this interation |  | 6d | 2005-05-12 A | 2005-05-19 A | 26 | 100% |  |  |  | Ulli [50%] | 24h | 24h |
| 28 | 1.4.3 | Deploy Iteration to Production |  | 5d | 2005-05-20 A | 2005-05-26 A | 27, 11 | 100% |  |  |  | QA | 40h | 40h |
| 29 | 1.5 | **caMOD Version 2 caBIG Silver Compliance (N-Tier)** |  | 249.48d | 2005-01-26 A | 2006-01-10 | 8 | 86% | 34.4d | 57.62d |  |  | 5319.87h | 3835.47h |
| 30 | 1.5.1 | **Inception** |  | 5d | 2005-01-26 A | 2005-02-01 A |  | 100% |  |  |  |  | 80h | 80h |
| 31 | 1.5.1.1 | Identify caMOD caBIG Silver (N-Tier) Requirements |  | 1w | 2005-01-26 A | 2005-02-01 A |  | 100% |  |  |  | CCMG; NCICB | 80h | 80h |
| 32 | 1.5.2 | **Elaboration** |  | 105d | 2005-02-09 A | 2005-07-05 | 30 | 91% | 9.72d | 192.1d |  |  | 1221.47h | 1093.47h |
| 33 | 1.5.2.1 | Draft caMOD caBIG Silver (N-Tier) Use Cases |  | 4w | 2005-02-09 A | 2005-05-20 A |  | 100% |  |  |  | Johnita [50%]; Srini [50%] | 120.67h | 120.67h |
| 34 | 1.5.2.2 | Review Use Cases, including CCMG members |  | 1d | 2005-02-28 A | 2005-05-26 A | 33FS+3d | 100% |  |  |  | CCMG Members | 8h | 8h |
| 35 | 1.5.2.3 | Draft caMOD caBIG Silver (N-Tier) Test Cases |  | 4w | 2005-05-26 A | 2005-06-23 A | 34 | 100% |  |  |  | QA [50%]; Ulli [50%]; Nick [50%] | 240h | 240h |
| 36 | 1.5.2.4 | Use of Common Security Manager |  | 3w | 2005-05-20 A | 2005-06-10 A | 33 | 100% |  |  |  | Johnita [50%]; Ulli [15%] | 78h | 78h |
| 37 | 1.5.2.5 | **Architecture** |  | 21d | 2005-05-11 A | 2005-06-08 | 33 | 97% | 0.55d | 211.1d |  |  | 112h | 108h |
| 38 | 1.5.2.5.1 | Initial Draft of Architecture |  | 2w | 2005-05-11 A | 2005-05-24 A |  | 100% |  |  |  | Johnita [50%] | 40h | 40h |
| 39 | 1.5.2.5.2 | Internal review with MMHCC Team |  | 1d | 2005-05-25 A | 2005-05-25 A | 38 | 100% |  |  |  | Team | 8h | 8h |
| 40 | 1.5.2.5.3 | Incorporate Comments/Feedback from the team review |  | 2d | 2005-05-26 A | 2005-05-27 A | 39 | 100% |  |  |  | David | 16h | 16h |
| 41 | 1.5.2.5.4 | Review architecture with the "Review Board" |  | 1d | 2005-06-01 A | 2005-06-01 A | 40 | 100% |  |  | start no earlier than 2005-06-01 | Team | 8h | 8h |
| 42 | 1.5.2.5.5 | Draft design document (caBIG template) |  | 1w | 2005-06-02 A | 2005-06-08 | 41 | 90% | 0.1w | 0d |  | David | 40h | 36h |
| 43 | 1.5.2.5.6 | Milestone: Completed Design document | milestone | 0d | 2005-06-08 A | 2005-06-08 | 42 | 90% | 0d | 211.1d |  | David |  |  |
| 44 | 1.5.2.6 | **User Interface Design** |  | 31.5d | 2005-05-02 A | 2005-06-14 |  | 98% | 0.79d | 207.6d |  |  | 180h | 176h |
| 45 | 1.5.2.6.1 | Draft User Interface Components |  | 1w | 2005-05-02 A | 2005-05-24 A | 33 | 100% |  |  | finish no earlier than 2005-05-09 | Srini; Nick | 60h | 60h |
| 46 | 1.5.2.6.2 | Internal Review of Draft UI components |  | 1d | 2005-05-24 A | 2005-05-25 A | 45 | 100% |  |  |  | Team | 8h | 8h |
| 47 | 1.5.2.6.3 | Incorporate comments/Feedback |  | 3d | 2005-05-25 A | 2005-05-30 A | 46 | 100% |  |  |  | Nick | 24h | 24h |
| 48 | 1.5.2.6.4 | Incorporate icons, banners from Graphics Artist |  | 1d | 2005-05-30 A | 2005-05-31 | 47 | 50% | 0.5d | 182.5d |  | Nick | 8h | 4h |
| 49 | 1.5.2.6.5 | Review Draft User Interface, including CCMG members |  | 5d | 2005-05-31 A | 2005-06-07 A | 48 | 100% |  |  |  | CCMG Members | 40h | 40h |
| 50 | 1.5.2.6.6 | Incorporate comments/feedback from CCMG |  | 2d | 2005-06-07 A | 2005-06-09 A | 49 | 100% |  |  |  | Nick | 16h | 16h |
| 51 | 1.5.2.6.7 | Incorporate template in MVC framework |  | 3d | 2005-06-09 A | 2005-06-14 A | 50 | 100% |  |  |  | Nick | 24h | 24h |
| 52 | 1.5.2.6.8 | Milestone: Completed wireframes | milestone | 0d | 2005-06-07 A | 2005-06-07 A | 49 | 100% |  |  |  |  |  |  |

| ID | WBS | Task | Duration | Start | Finish | Predecessors | Complete | Remaining | Total slack | Free slack | Constraint | Resources | Work | Actual work |
| --- | --- | --- | --- | --- | --- | --- | --- | --- | --- | --- | --- | --- | --- | --- |
| 53 | 1.5.2.7 | **Persistence API Development** | 94d | 2005-02-22 A | 2005-07-01 A |  | 100% |  |  |  |  |  | 124.8h | 124.8h |
| 54 | 1.5.2.7.1 | Determine use of automatic code generator | 8d | 2005-02-22 A | 2005-05-16 A |  | 100% |  |  |  |  | Marc P. [50%]; Johnita [20%] | 44.8h | 44.8h |
| 55 | 1.5.2.7.2 | Establish baseline search capability | 2w | 2005-06-06 A | 2005-06-17 A |  | 100% |  |  |  | start no earlier than 2005-06-06 |  |  |  |
| 56 | 1.5.2.7.3 | Establish baseline delete capability | 1w | 2005-06-20 A | 2005-06-24 A | 55 | 100% |  |  |  |  | Marc P | 40h | 40h |
| 57 | 1.5.2.7.4 | Establish baseline insert capability | 1w | 2005-06-27 A | 2005-07-01 A | 56 | 100% |  |  |  |  | Marc P | 40h | 40h |
| 58 | 1.5.2.8 | Draft Updated Object Model | 1.98w | 2005-05-25 A | 2005-06-10 A | 38 | 100% |  |  |  |  | Marc P. [50%]; TBD [25%]; David [50%] | 58h | 58h |
| 59 | 1.5.2.9 | Draft Updated Data Model | 2w | 2005-05-25 A | 2005-06-07 A | 38 | 100% |  |  |  |  | Marc P. [50%]; TBD [25%] | 60h | 60h |
| 60 | 1.5.2.10 | **Interface with caDSR** | 24.5d | 2005-06-01 A | 2005-07-05 |  | 41% | 14.5d | 192.1d |  |  |  | 240h | 120h |
| 61 | 1.5.2.10.1 | Annotate UML model with well formed names and definitions | 3d | 2005-06-01 A | 2005-06-06 A | 58FS-7d | 100% |  |  |  |  | Ulli | 24h | 24h |
| 62 | 1.5.2.10.2 | Review semantic connector output | 0.5d | 2005-06-06 A | 2005-06-06 A | 61 | 100% |  |  |  |  | Srini; Ulli | 8h | 8h |
| 63 | 1.5.2.10.3 | Perform semantic annotation of UML models | 2d | 2005-06-07 A | 2005-06-08 A | 62 | 100% |  |  |  |  | Ulli | 16h | 16h |
| 64 | 1.5.2.10.4 | Run UML loader | 2w | 2005-06-09 | 2005-06-22 | 63 |  |  | 157d | 0d |  | NCICB | 80h |  |
| 65 | 1.5.2.10.5 | Review CDEs in staging | 2d | 2005-06-23 | 2005-06-24 | 64 |  |  | 157d | 0d |  | Ulli | 16h |  |
| 66 | 1.5.2.10.6 | Curate additional metadata | 2d | 2005-06-27 | 2005-06-28 | 65 |  |  | 157d | 0d |  | Ulli | 16h |  |
| 67 | 1.5.2.10.7 | Establish baseline documentation and prepare submission package | 1w | 2005-06-29 A | 2005-07-05 | 66 | 90% | 0.1w | 157d |  |  | Srini; Ulli | 80h | 72h |
| 68 | 1.5.3 | **Construction** | 166.98d | 2005-05-20 A | 2006-01-10 |  | 89% | 19.05d | 57.62d |  |  |  | 3874.8h | 2662.01h |
| 69 | 1.5.3.1 | **Iteration 1: Architecture Prototype (Evolutionary Prototype)** | 42.5d | 2005-05-20 A | 2005-07-19 A |  | 100% |  |  |  |  |  | 292h | 292h |
| 70 | 1.5.3.1.1 | **Requirements Analysis** | 16d | 2005-05-20 A | 2005-06-13 A | 33 | 100% |  |  |  |  |  | 46h | 46h |
| 71 | 1.5.3.1.1.1 | Requirements Outline | 7d | 2005-05-20 A | 2005-05-31 A |  | 100% |  |  |  |  | Ulli [50%] | 28h | 28h |
| 72 | 1.5.3.1.1.2 | Complete Requirements Analysis | 3d | 2005-06-08 A | 2005-06-13 A | 71, 36FF+1d | 100% |  |  |  |  | Ulli [50%]; Srini [25%] | 18h | 18h |
| 73 | 1.5.3.1.2 | Design | 3w | 2005-05-31 A | 2005-06-21 A | 71, 38FS-5d | 100% |  |  |  |  | Srini [50%]; Nick [25%] | 90h | 90h |
| 74 | 1.5.3.1.3 | Code | 3w | 2005-06-17 A | 2005-07-19 A | 73FS-2d | 100% |  |  |  |  | Nick; Srini [50%] | 120h | 120h |
| 75 | 1.5.3.1.4 | Test | 3d | 2005-07-08 A | 2005-07-13 A | 74 | 100% |  |  |  |  | QA; Ulli [50%] | 36h | 36h |
| 76 | 1.5.3.2 | Draft Deployment Scripts | 3d | 2005-07-08 A | 2005-07-13 A | 74 | 100% |  |  |  |  | David [25%] | 6h | 6h |

| ID | WBS | Task | Duration | Start | Finish | Predecessors | Complete | Remaining | Total slack | Resources | Work | Actual work |
| --- | --- | --- | --- | --- | --- | --- | --- | --- | --- | --- | --- | --- |
| 77 | 1.5.3.3 | **Iteration 2: Submit Cancer Models** | 136.48d | 2005-07-04 A | 2006-01-10 | 53 | 98% | 2.33d | 57.62d |  | 696h | 678h |
| 78 | 1.5.3.3.1 | Requirements Analysis | 2w | 2005-07-04 A | 2005-07-15 A | 70 | 100% |  |  | Nick [75%]; Sima [50%] | 100h | 100h |
| 79 | 1.5.3.3.2 | Design | 2w | 2005-07-18 A | 2005-07-29 A | 78 | 100% |  |  | Srini [50%] | 40h | 40h |
| 80 | 1.5.3.3.3 | Review Wireframes, including CCMG members | 5d | 2005-08-01 A | 2005-08-05 A | 79 | 100% |  |  | CCMG Members | 40h | 40h |
| 81 | 1.5.3.3.4 | Code | 12w | 2005-08-08 A | 2005-11-03 A | 80, 74 | 100% |  |  | Nick; Sima | 480h | 480h |
| 82 | 1.5.3.3.5 | Test | 3d | 2005-08-29 A | 2006-01-10 | 81, 75 | 50% | 1.5d | 57.62d | QA; Ulli [50%] | 36h | 18h |
| 83 | 1.5.3.4 | **Iteration 3: Search Cancer Models** | 82.35d | 2005-07-18 A | 2005-11-09 A |  | 100% |  |  |  | 496h | 496h |
| 84 | 1.5.3.4.1 | Requirements Analysis | 2w | 2005-07-18 A | 2005-07-29 A | 78 | 100% |  |  | Ulli [75%]; Srini [50%] | 100h | 100h |
| 85 | 1.5.3.4.2 | **NCICB Security Model Integration** | 15d | 2005-08-01 A | 2005-08-19 A | 84 | 100% |  |  |  | 120h | 120h |
| 86 | 1.5.3.4.2.1 | Identify and interface with NCICB CSM Services | 5d | 2005-08-01 A | 2005-08-05 A |  | 100% |  |  | David | 40h | 40h |
| 87 | 1.5.3.4.2.2 | Identify and implement UPT Hosting | 5d | 2005-08-08 A | 2005-08-12 A | 86 | 100% |  |  | David | 40h | 40h |
| 88 | 1.5.3.4.2.3 | Intergrate into Architectural prototype | 5d | 2005-08-15 A | 2005-08-19 A | 87 | 100% |  |  | David | 40h | 40h |
| 89 | 1.5.3.4.3 | Design | 2w | 2005-08-08 A | 2005-08-19 A | 79, 86 | 100% |  |  | David | 80h | 80h |
| 90 | 1.5.3.4.4 | Review Wireframes, including CCMG members | 5d | 2005-08-22 A | 2005-08-26 A | 89 | 100% |  |  | CCMG Members | 40h | 40h |
| 91 | 1.5.3.4.5 | Code | 3w | 2005-08-29 A | 2005-11-09 A | 81, 90 | 100% |  |  | David | 120h | 120h |
| 92 | 1.5.3.4.6 | Test | 3d | 2005-09-19 A | 2005-09-21 A | 91, 82 | 100% |  |  | QA; Ulli [50%] | 36h | 36h |
| 93 | 1.5.3.5 | **Integration Testing Schedule** | 148.6d | 2005-05-24 A | 2005-12-19 |  | 47% | 78.85d | 0d | QA | 2384.8h | 1190.01h |
| 94 | 1.5.3.5.1 | **Develop Test Plan** | 44.5d | 2005-05-24 A | 2005-07-25 A | 45 | 100% |  |  | QA | 620h | 620h |
| 95 | 1.5.3.5.1.1 | Develop Iteration 1 Test Plan | 6d | 2005-06-13 A | 2005-06-21 A | 70 | 100% |  |  | QA; Ulli [50%] | 72h | 72h |
| 96 | 1.5.3.5.1.2 | Develop Iteration 2 Test Plan | 6d | 2005-07-18 A | 2005-07-25 A | 78 | 100% |  |  | QA; Ulli [50%] | 72h | 72h |
| 97 | 1.5.3.5.1.3 | Develop Integration Test Plan | 10d | 2005-05-24 A | 2005-06-07 A |  | 100% |  |  | QA; Ulli [50%] | 120h | 120h |
| 98 | 1.5.3.5.2 | Deploy All Iterations to Development Server | 1d | 2005-11-10 A | 2005-11-11 A | 92 | 100% |  |  | QA; TBD [50%] | 12h | 12h |
| 99 | 1.5.3.5.3 | Development Test All Iterations | 8d | 2005-11-11 | 2005-11-23 | 98 |  |  | 0d | QA; Ulli; TBD [50%]; Nick | 224h |  |
| 100 | 1.5.3.5.4 | Deploy All Iteration to Integration Test Server | 1d | 2005-11-23 | 2005-11-24 | 99 |  |  | 0d | QA; TBD [50%] | 12h |  |
| 101 | 1.5.3.5.5 | Integration Test All Iterations | 8d | 2005-11-24 | 2005-12-06 | 100, 97 |  |  | 0d | QA; Ulli | 128h |  |
| 102 | 1.5.3.5.6 | Deploy All Iterations to Staging Server | 1d | 2005-12-06 | 2005-12-07 | 101 |  |  | 0d | QA | 8h |  |
| 103 | 1.5.3.5.7 | UAT Test All Iterations | 8d | 2005-12-07 | 2005-12-19 | 102 |  |  | 0d | CCMG; Ulli; Fei | 192h |  |

| ID | WBS | Task | Type | Duration | Start | Finish | Predecessors | Total slack | Free slack | Resources | Work |
| --- | --- | --- | --- | --- | --- | --- | --- | --- | --- | --- | --- |
| 104 | 1.5.4 | **Transition** |  | 5d | 2005-12-19 | 2005-12-26 | 93 | 0d |  |  | 135.6h |
| 105 | 1.5.4.1 | Code Freeze | milestone | 1d | 2005-12-19 | 2005-12-20 | 93 | 2d | 0d | David | 8h |
| 106 | 1.5.4.2 | Deploy Iteration to Production |  | 2d | 2005-12-20 | 2005-12-22 | 105 | 2d |  | QA | 16h |
| 107 | 1.5.4.3 | **Document Iteration** |  | 5d | 2005-12-19 | 2005-12-26 |  | 0d |  |  | 111.6h |
| 108 | 1.5.4.3.1 | Update User Guides |  | 5d | 2005-12-19 | 2005-12-26 | 93 | 0d |  | Ulli; Nick [50%] | 44h |
| 109 | 1.5.4.3.2 | Update technical / design documentation |  | 5d | 2005-12-19 | 2005-12-26 | 92 | 0d |  | Ulli [50%]; Srini [50%]; Jill [50%] | 49.6h |
| 110 | 1.5.4.3.3 | Regenerate JavaDocs |  | 0.25d | 2005-12-19 | 2005-12-19 | 93 | 4.75d |  | David | 2h |
| 111 | 1.5.4.3.4 | Create Release Notes |  | 0.5d | 2005-12-19 | 2005-12-19 | 93 | 3d | 0d | Srini | 4h |
| 112 | 1.5.4.3.5 | Create Known Issues document |  | 0.5d | 2005-12-19 | 2005-12-20 | 111 | 3d | 0d | Srini | 4h |
| 113 | 1.5.4.3.6 | Create Fixed defects document |  | 0.5d | 2005-12-20 | 2005-12-20 | 112 | 3d | 0d | Srini | 4h |
| 114 | 1.5.4.3.7 | Create What's New Document |  | 0.5d | 2005-12-20 | 2005-12-21 | 113 | 3d |  | Srini | 4h |
| 115 | 1.5.5 | Milestone: Complete Version 2 | milestone | 1d | 2005-12-26 | 2005-12-27 | 104 | 0d |  | Srini | 8h |
| 116 | 1.6 | **caMOD Version 2.1** |  | 68d | 2005-12-27 | 2006-03-31 |  | 0d |  |  | 852h |
| 117 | 1.6.1 | **Inception** |  | 6d | 2005-12-27 | 2006-01-04 | 115 | 0d |  |  | 48h |
| 118 | 1.6.1.1 | Identify caMOD 2.1 requirements |  | 3d | 2005-12-27 | 2005-12-30 |  | 0d |  | Srini [50%]; TBD [50%]; Ulli [50%] | 24h |
| 119 | 1.6.1.2 | Identify usability enhancement requirements |  | 3d | 2005-12-30 | 2006-01-04 | 118 | 0d |  | Srini [50%]; TBD [50%]; Ulli [50%] | 24h |
| 120 | 1.6.2 | **Elaboration** |  | 6d | 2006-01-04 | 2006-01-12 | 119 | 0d |  |  | 80h |
| 121 | 1.6.2.1 | Draft caMOD 2.1 Use Cases |  | 1w | 2006-01-04 | 2006-01-11 |  | 0d |  | TBD | 40h |
| 122 | 1.6.2.2 | Review Use Cases, including CCMG members |  | 1d | 2006-01-11 | 2006-01-12 | 121 | 56d |  |  |  |
| 123 | 1.6.2.3 | Draft caMOD 2.1 Test Cases |  | 1w | 2006-01-04 | 2006-01-11 |  | 52d | 0d | Ulli [50%]; Nick [50%] | 40h |
| 124 | 1.6.3 | **Construction** |  | 54d | 2006-01-11 | 2006-03-28 |  | 0d |  |  | 680h |
| 125 | 1.6.3.1 | **Iteration 1: Administration Module** |  | 38d | 2006-01-11 | 2006-03-06 |  | 0d |  |  | 316h |
| 126 | 1.6.3.1.1 | Requirements Analysis |  | 2w | 2006-01-11 | 2006-01-25 | 121 | 0d |  | TBD [50%]; Ulli [75%] | 80h |
| 127 | 1.6.3.1.2 | Design |  | 2w | 2006-01-25 | 2006-02-08 | 126 | 0d |  | Marc P. [50%]; TBD [50%] | 80h |
| 128 | 1.6.3.1.3 | Code |  | 3w | 2006-02-08 | 2006-03-01 | 127 | 0d |  | Marc P. [50%]; Nick | 120h |
| 129 | 1.6.3.1.4 | Test |  | 3d | 2006-03-01 | 2006-03-06 | 128 | 0d |  | QA; Ulli [50%] | 36h |
| 130 | 1.6.3.2 | Develop Iteration 4 Test Plan |  | 2d | 2006-01-11 | 2006-01-13 | 123 | 52d |  | QA; Ulli [50%] | 24h |
| 131 | 1.6.3.3 | Deploy Iteration to Development Server |  | 1d | 2006-03-06 | 2006-03-07 | 129 | 0d |  | QA; TBD [50%] | 12h |
| 132 | 1.6.3.4 | Development Test this Iteration |  | 5d | 2006-03-07 | 2006-03-14 | 131 | 0d |  | QA; Ulli; TBD [50%]; Nick | 140h |
| 133 | 1.6.3.5 | Deploy Iteration to Integration Test Server |  | 1d | 2006-03-14 | 2006-03-15 | 132 | 0d |  | QA; TBD [50%] | 12h |
| 134 | 1.6.3.6 | Integration Test this Iterations |  | 3d | 2006-03-15 | 2006-03-20 | 133 | 0d |  | QA; Ulli | 48h |
| 135 | 1.6.3.7 | Deploy Iteration to Staging Server |  | 1d | 2006-03-20 | 2006-03-21 | 134 | 0d |  | QA | 8h |
| 136 | 1.6.3.8 | UAT Test this Iteration |  | 5d | 2006-03-21 | 2006-03-28 | 135 | 0d |  | CCMG; Ulli; Fei | 120h |

| ID | WBS | Task | Type | Duration | Start | Finish | Predecessors | Total slack | Resources | Work |
| --- | --- | --- | --- | --- | --- | --- | --- | --- | --- | --- |
| 137 | 1.6.4 | **Transition** |  | 3d | 2006-03-28 | 2006-03-31 |  | 0d |  | 44h |
| 138 | 1.6.4.1 | Code Freeze |  | 1d | 2006-03-28 | 2006-03-29 | 124 | 0d | TBD [50%]; Nick | 12h |
| 139 | 1.6.4.2 | Deploy Iteration to Production |  | 2d | 2006-03-29 | 2006-03-31 | 138 | 0d | QA | 16h |
| 140 | 1.6.4.3 | Create Release Notes |  | 0.5d | 2006-03-29 | 2006-03-29 | 138 | 1.5d | Srini | 4h |
| 141 | 1.6.4.4 | Create Known Issues document |  | 0.5d | 2006-03-29 | 2006-03-29 | 138 | 1.5d | Srini | 4h |
| 142 | 1.6.4.5 | Create Fixed defects document |  | 0.5d | 2006-03-29 | 2006-03-29 | 138 | 1.5d | Srini | 4h |
| 143 | 1.6.4.6 | Create What's New Document |  | 0.5d | 2006-03-29 | 2006-03-29 | 138 | 1.5d | Srini | 4h |
| 144 | 1.6.5 | Milestone: Complete Version 2.1 | milestone | 0d | 2006-03-31 | 2006-03-31 | 137 | 0d | Srini |  |
